# 01_PROV_CRONO_SANP1_2112017

Schedule from MS Project, 2017-11-22 to 2018-04-23.

## Calendars

- Días Calendario: Mon-Sun 09:00-13:00, 15:00-19:00.

## Schedule

| ID | WBS | Task | Type | Duration | Start | Finish | Predecessors | Total slack | Free slack |
| --- | --- | --- | --- | --- | --- | --- | --- | --- | --- |
| 1 | 1 | **Saneamiento IIRSA SUR** |  | 153d | 2017-11-22 | 2018-04-23 |  | 0d |  |
| 2 | 1.1 | **Hitos** |  | 120d | 2017-12-20 | 2018-04-19 |  | 4d |  |
| 3 | 1.1.1 | Primer Entregable | milestone | 0d | 2017-12-20 | 2017-12-20 | 19 | 124d |  |
| 4 | 1.1.2 | Segundo Entregable | milestone | 0d | 2018-01-19 | 2018-01-19 | 29 | 94d |  |
| 5 | 1.1.3 | Tercer Entregable | milestone | 0d | 2018-03-20 | 2018-03-20 | 36 | 34d |  |
| 6 | 1.1.4 | Cuarto Entregable / Informe Final | milestone | 0d | 2018-04-19 | 2018-04-19 | 45 | 4d |  |
| 7 | 1.2 | **Inicio y Planificación** |  | 1d | 2017-11-22 | 2017-11-22 |  | 152d |  |
| 8 | 1.2.1 | Conformación de equipo |  | 1d | 2017-11-22 | 2017-11-22 |  | 152d |  |
| 9 | 1.3 | **Ejecución y monitoreo** |  | 153d | 2017-11-22 | 2018-04-23 |  | 0d |  |
| 10 | 1.3.1 | **Primer Entregable** |  | 30d | 2017-11-22 | 2017-12-21 |  | 0d |  |
| 11 | 1.3.1.1 | Recepción de Expedientes de Afectación |  | 7d | 2017-11-22 | 2017-11-28 |  | 0d |  |
| 12 | 1.3.1.2 | Análisis de Expedientes de Afectación |  | 12d | 2017-11-29 | 2017-12-10 | 11 | 0d |  |
| 13 | 1.3.1.3 | Recopilación de Partidas Registrales de Predios Adquiridos |  | 12d | 2017-11-29 | 2017-12-10 | 12SS | 0d |  |
| 14 | 1.3.1.4 | Recopilación de Partes Notariales y Contratos de Indemnización |  | 7d | 2017-12-11 | 2017-12-17 | 13 | 0d |  |
| 15 | 1.3.1.5 | Incorporación en Índice de Presentantes del Sistema Notarial |  | 6d | 2017-12-12 | 2017-12-17 | 14SS+1d | 0d |  |
| 16 | 1.3.1.6 | Elaboración de Cuadro Resumen de Predios Adquiridos |  | 1d | 2017-12-18 | 2017-12-18 | 15 | 0d |  |
| 17 | 1.3.1.7 | Inspección Técnica de Predios Adquiridos |  | 14d | 2017-12-08 | 2017-12-21 | 12SS+9d | 123d |  |
| 18 | 1.3.1.8 | Elaboración de Informe de Primer Entregable |  | 2d | 2017-12-18 | 2017-12-19 | 16SS | 0d |  |
| 19 | 1.3.1.9 | Control de Calidad |  | 1d | 2017-12-20 | 2017-12-20 | 18 | 0d |  |
| 20 | 1.3.1.10 | Entrega de Informe de Primer Entregable a Cliente |  | 1d | 2017-12-21 | 2017-12-21 | 19 | 0d |  |
| 21 | 1.3.2 | **Segundo Entregable** |  | 29d | 2017-12-22 | 2018-01-19 |  | 0d |  |
| 22 | 1.3.2.1 | Elaboración de Planos Perimétricos y de Ubicación |  | 14d | 2017-12-22 | 2018-01-04 | 20 | 109d | 0d |
| 23 | 1.3.2.2 | Elaboración de Memorias Descriptivas |  | 14d | 2017-12-22 | 2018-01-04 | 22SS | 109d |  |
| 24 | 1.3.2.3 | Elaboración de Proyectos de Publicación en El Peruano y Otros |  | 21d | 2017-12-22 | 2018-01-11 | 20 | 0d |  |
| 25 | 1.3.2.4 | Elaboración de Declaraciones Juradas |  | 21d | 2017-12-22 | 2018-01-11 | 24SS | 0d |  |
| 26 | 1.3.2.5 | Conformación de Expedientes Técnicos de Predios Adquiridos |  | 4d | 2018-01-12 | 2018-01-15 | 25 | 0d |  |
| 27 | 1.3.2.6 | Elaboración de Informe de Segundo Entregable |  | 2d | 2018-01-16 | 2018-01-17 | 26 | 0d |  |
| 28 | 1.3.2.7 | Control de Calidad |  | 1d | 2018-01-18 | 2018-01-18 | 27 | 0d |  |
| 29 | 1.3.2.8 | Entrega de Informe de Segundo Entregable a Cliente |  | 1d | 2018-01-19 | 2018-01-19 | 28 | 0d |  |

| ID | WBS | Task | Duration | Start | Finish | Predecessors | Total slack |
| --- | --- | --- | --- | --- | --- | --- | --- |
| 30 | 1.3.3 | **Tercer Entregable** | 60d | 2018-01-20 | 2018-03-20 |  | 0d |
| 31 | 1.3.3.1 | Presentación de Expedientes a SUNARP para Anot. Preventiva | 10d | 2018-01-20 | 2018-01-29 | 29 | 0d |
| 32 | 1.3.3.2 | Seguimiento de Estado de Títulos en SUNARP | 20d | 2018-01-30 | 2018-02-18 | 31 | 0d |
| 33 | 1.3.3.3 | Presentación de Solicitud de Inscripción Definitiva a SUNARP | 15d | 2018-03-01 | 2018-03-15 | 32SS+30d | 0d |
| 34 | 1.3.3.4 | Elaboración de Informe de Tercer Entregable | 3d | 2018-03-16 | 2018-03-18 | 33 | 0d |
| 35 | 1.3.3.5 | Control de Calidad | 1d | 2018-03-19 | 2018-03-19 | 34 | 0d |
| 36 | 1.3.3.6 | Entrega de Informe de Tercer Entregable a Cliente | 1d | 2018-03-20 | 2018-03-20 | 35 | 0d |
| 37 | 1.3.4 | **Cuarto Entregable** | 30d | 2018-03-21 | 2018-04-19 |  | 0d |
| 38 | 1.3.4.1 | Obtención de Partidas Registrales a favor de PROVIAS | 5d | 2018-03-21 | 2018-03-25 | 36 | 0d |
| 39 | 1.3.4.2 | Elaboración de Fichas de Predio Inscrito | 10d | 2018-03-26 | 2018-04-04 | 38 | 0d |
| 40 | 1.3.4.3 | Elaboración de Informe Individual de Predios No inscrito | 5d | 2018-04-05 | 2018-04-09 | 39 | 0d |
| 41 | 1.3.4.4 | Elaboración de Cuadro Resumen de Predios Inscritos | 3d | 2018-04-10 | 2018-04-12 | 40 | 0d |
| 42 | 1.3.4.5 | Elaboración de Plano Mosaico de Predios Inscritos | 10d | 2018-03-26 | 2018-04-04 | 38 | 19d |
| 43 | 1.3.4.6 | Elaboración de Informe de Tercer Entregable | 5d | 2018-04-13 | 2018-04-17 | 41 | 0d |
| 44 | 1.3.4.7 | Control de Calidad | 1d | 2018-04-18 | 2018-04-18 | 43 | 0d |
| 45 | 1.3.4.8 | Entrega de Informe de Tercer Entregable a Cliente | 1d | 2018-04-19 | 2018-04-19 | 44 | 0d |
| 46 | 1.3.5 | **Cierre de Proyecto** | 4d | 2018-04-20 | 2018-04-23 |  | 0d |
| 47 | 1.3.5.1 | Elaboración de documentación para Cierre de Proyecto | 4d | 2018-04-20 | 2018-04-23 | 45 | 0d |
