# Cronograma_Estación Hidrométrica Pongor

Schedule from MS Project, 2018-07-21 to 2018-08-01.
Hewlett-Packard Company

## Calendars

- Estándar: Mon-Sun 07:00-18:00. Exceptions (off unless hours are given): 2018-07-28 to 2018-07-29 (Dia de la patria).

## Schedule

| ID | WBS | Task | Type | Duration | Start | Finish | Predecessors | Total slack | Constraint |
| --- | --- | --- | --- | --- | --- | --- | --- | --- | --- |
| 1 | 1 | **Tasación comercial Estación Hidrométrica Pongor** |  | 13d | 2018-07-21 | 2018-08-01 |  | 0d |  |
| 2 | 1.1 | **Inicio** |  | 0d | 2018-07-21 | 2018-07-21 |  | 0d |  |
| 3 | 1.1.1 | Inicio de proyecto | milestone | 0d | 2018-07-21 | 2018-07-21 |  | 0d | start no earlier than 2018-07-21 |
| 4 | 1.2 | **Ejecución** |  | 13d | 2018-07-21 | 2018-08-01 |  | 0d |  |
| 5 | 1.2.1 | **Trabajo de Campo** |  | 4d | 2018-07-21 | 2018-07-23 |  | 0d |  |
| 6 | 1.2.1.1 | Movilización a la zona de trabajo |  | 0.5d | 2018-07-21 | 2018-07-21 | 3 | 0d |  |
| 7 | 1.2.1.2 | Replanteo de vértices de área requerida |  | 3d | 2018-07-21 | 2018-07-23 | 6 | 0d |  |
| 8 | 1.2.1.3 | Inpección de campo |  | 3d | 2018-07-21 | 2018-07-23 | 6 | 0d |  |
| 9 | 1.2.1.4 | Estudio de mercado local |  | 3d | 2018-07-21 | 2018-07-23 | 6 | 0d |  |
| 10 | 1.2.1.5 | Desmovilización de la zona de trabajo |  | 0.5d | 2018-07-23 | 2018-07-23 | 9, 8, 7 | 0d |  |
| 11 | 1.2.2 | **Trabajo de gabinete** |  | 9d | 2018-07-24 | 2018-08-01 |  | 0d |  |
| 12 | 1.2.2.1 | Elaboración de planos y memorias descriptivas |  | 4d | 2018-07-24 | 2018-07-26 | 10 | 5d |  |
| 13 | 1.2.2.2 | Elaboración de Tasación Comercial |  | 4d | 2018-07-24 | 2018-07-26 | 10 | 0d |  |
| 14 | 1.2.2.3 | Elaboración de propuestas de contratos |  | 3d | 2018-07-26 | 2018-07-31 | 13 | 0d |  |
| 15 | 1.2.2.4 | Control de calidad |  | 2d | 2018-07-31 | 2018-08-01 | 14 | 0d |  |
| 16 | 1.3 | **Cierre** |  | 0d | 2018-08-01 | 2018-08-01 |  | 0d |  |
| 17 | 1.3.1 | Entrega al cliente | milestone | 0d | 2018-08-01 | 2018-08-01 | 15 | 0d |  |
| 18 | 1.3.2 | Cierre de proyecto | milestone | 0d | 2018-08-01 | 2018-08-01 | 17 | 0d |  |
