# Orocom_Cronograma-Junin_v1

Schedule from MS Project, 2018-07-30 to 2019-03-28.
Microsoft

## Calendars

- JPP: Mon-Sun 09:00-13:00, 14:00-18:00.

## Schedule

| ID | WBS | Task | Type | Duration | Start | Finish | Predecessors | Total slack | Free slack | Constraint |
| --- | --- | --- | --- | --- | --- | --- | --- | --- | --- | --- |
| 1 | 1 | **Proyecto: Instalación de Banda Ancha para la Conectividad Integral y Desarrollo Social de las Regiones Tacna-Moquegua** |  | 242d | 2018-07-30 | 2019-03-28 |  | 0d |  |  |
| 2 | 1.1 | **Hitos** |  | 242d | 2018-07-30 | 2019-03-28 |  | 0d |  |  |
| 3 | 1.1.1 | Firma de Contrato | milestone | 0d | 2018-07-30 | 2018-07-30 | 13SS | 242d |  |  |
| 4 | 1.1.2 | E1: Inicia búsqueda de sitios | milestone | 0d | 2018-08-06 | 2018-08-06 | 20SS | 235d |  |  |
| 5 | 1.1.3 | E2: Inicia diagnóstico físico legal | milestone | 0d | 2018-08-18 | 2018-08-18 | 25SS | 223d |  |  |
| 6 | 1.1.4 | E3: Inicia gestión de firma de contratos | milestone | 0d | 2018-08-21 | 2018-08-21 | 30SS | 220d |  |  |
| 7 | 1.1.5 | E4: Inicia gestión de inscripción y/o independización | milestone | 0d | 2018-08-31 | 2018-08-31 | 32SS | 210d |  |  |
| 8 | 1.1.6 | E5: Inicia gestión del informe arqueológico y obtención de CIRA | milestone | 0d | 2018-08-31 | 2018-08-31 | 39SS | 210d |  |  |
| 9 | 1.1.7 | E6: Inicia gestión de aprobación de PMA / obtención de informe final de PMA | milestone | 0d | 2018-09-25 | 2018-09-25 | 43SS | 185d |  |  |
| 10 | 1.1.8 | E7: Inicia gestión de obtención de licencia de obra | milestone | 0d | 2018-09-10 | 2018-09-10 | 47SS | 200d |  |  |
| 11 | 1.1.9 | E8: Informe final | milestone | 0d | 2019-03-28 | 2019-03-28 | 51 | 0d |  |  |
| 12 | 1.2 | **Inicio y Planificación** |  | 7d | 2018-07-30 | 2018-08-05 |  | 0d |  |  |
| 13 | 1.2.1 | Recepción y análisis de la información |  | 2d | 2018-07-30 | 2018-07-31 |  | 0d |  | start no earlier than 2018-07-30 |
| 14 | 1.2.2 | Conformación del equipo de trabajo |  | 1d | 2018-08-01 | 2018-08-01 | 13 | 0d |  |  |
| 15 | 1.2.3 | Gestión de logística del proyecto |  | 2d | 2018-08-01 | 2018-08-02 | 14SS | 238d |  |  |
| 16 | 1.2.4 | Inducción al personal de trabajo |  | 2d | 2018-08-02 | 2018-08-03 | 14 | 0d |  |  |
| 17 | 1.2.5 | Movilización del equipo de trabajo |  | 2d | 2018-08-04 | 2018-08-05 | 16 | 0d |  |  |
| 18 | 1.3 | **Ejecución - Seguimiento y Control** |  | 235d | 2018-08-06 | 2019-03-28 |  | 0d |  |  |
| 19 | 1.3.1 | **Búsqueda de 197 sitios** |  | 133d | 2018-08-06 | 2018-12-16 |  | 0d |  |  |
| 20 | 1.3.1.1 | Obtención de candidatos viables |  | 130d | 2018-08-06 | 2018-12-13 | 17 | 0d |  |  |
| 21 | 1.3.1.2 | Envío de FVT |  | 130d | 2018-08-09 | 2018-12-16 | 20SS+3d | 102d |  |  |
| 22 | 1.3.1.3 | Envío de pre-informe legal |  | 130d | 2018-08-09 | 2018-12-16 | 20SS+3d | 102d |  |  |
| 23 | 1.3.1.4 | Envío de KMZ |  | 130d | 2018-08-09 | 2018-12-16 | 20SS+3d | 102d |  |  |
| 24 | 1.3.2 | **Diagnóstico físico legal de los sitios viables: Técnica y legalmente** |  | 146d | 2018-08-18 | 2019-01-10 |  | 0d |  |  |
| 25 | 1.3.2.1 | Aprobación de candidatos |  | 130d | 2018-08-18 | 2018-12-25 | 20SS+12d | 0d |  |  |
| 26 | 1.3.2.2 | Obtención de todos los documentos actualizados, necesarios para realizar el estudio de títulos |  | 130d | 2018-08-18 | 2018-12-25 | 25SS | 77d | 0d |  |
| 27 | 1.3.2.3 | Elaboración de carpeta legal |  | 140d | 2018-08-21 | 2019-01-07 | 26SS+3d | 77d | 0d |  |
| 28 | 1.3.2.4 | Elaboración de informe arqueológico |  | 140d | 2018-08-24 | 2019-01-10 | 27SS+3d | 77d |  |  |

| ID | WBS | Task | Duration | Start | Finish | Predecessors | Total slack | Free slack |
| --- | --- | --- | --- | --- | --- | --- | --- | --- |
| 29 | 1.3.3 | **Firma de contratos** | 150d | 2018-08-21 | 2019-01-17 |  | 0d |  |
| 30 | 1.3.3.1 | Gestión de firma de minutas con firmas legalizadas | 150d | 2018-08-21 | 2019-01-17 | 25SS+3d | 0d |  |
| 31 | 1.3.4 | **Inscripción y/o independización** | 180d | 2018-08-31 | 2019-02-26 |  | 15d |  |
| 32 | 1.3.4.1 | Gestión de firma de escritura pública | 160d | 2018-08-31 | 2019-02-06 | 30SS+10d | 15d | 0d |
| 33 | 1.3.4.2 | Gestión para inscripción de bloqueo de partida | 160d | 2018-08-31 | 2019-02-06 | 32SS | 50d |  |
| 34 | 1.3.4.3 | Gestión para inscripcción de contrato | 160d | 2018-08-31 | 2019-02-06 | 32SS | 50d |  |
| 35 | 1.3.4.4 | Gestión de subdivisión de lote ante la municipalidad | 160d | 2018-08-31 | 2019-02-06 | 32SS | 15d | 0d |
| 36 | 1.3.4.5 | Gestión de asignación de unidad catastral ante COFOPRI | 160d | 2018-08-31 | 2019-02-06 | 32SS | 50d |  |
| 37 | 1.3.4.6 | Gestión de ingreso de independización de predio ante SUNARP a favor del MTC (Transporte) y Orocom (Acceso) | 180d | 2018-08-31 | 2019-02-26 | 32SS | 30d |  |
| 38 | 1.3.5 | **Informe arqueológico y obtención de CIRA** | 175d | 2018-08-31 | 2019-02-21 |  | 0d |  |
| 39 | 1.3.5.1 | Elaboración de informe arqueológico | 160d | 2018-08-31 | 2019-02-06 | 30SS+10d | 0d |  |
| 40 | 1.3.5.2 | Elaboración de expediente | 160d | 2018-09-05 | 2019-02-11 | 39SS+5d | 45d |  |
| 41 | 1.3.5.3 | Gestión administrativa hasta obtener CIRA | 170d | 2018-09-05 | 2019-02-21 | 39SS+5d | 0d |  |
| 42 | 1.3.6 | **Aprobación de PMA / obtención de informe final de PMA** | 170d | 2018-09-25 | 2019-03-13 |  | 0d |  |
| 43 | 1.3.6.1 | Gestión administrativa para obtener resolución aprobando PMA | 160d | 2018-09-25 | 2019-03-03 | 41SS+20d | 0d |  |
| 44 | 1.3.6.2 | Elaboración de expediente informe de ejecución de PMA | 160d | 2018-10-05 | 2019-03-13 | 43SS+10d | 15d |  |
| 45 | 1.3.6.3 | Gestión administrativa para obtener resolución de aprobación de informe final | 160d | 2018-10-05 | 2019-03-13 | 43SS+10d | 0d |  |
| 46 | 1.3.7 | **Obtención de licencias** | 185d | 2018-09-10 | 2019-03-13 |  | 15d |  |
| 47 | 1.3.7.1 | Gestión administrativa para obtener resolución de aprobación de licencia | 185d | 2018-09-10 | 2019-03-13 | 35SS+10d | 15d | 0d |
| 48 | 1.3.8 | **Cierre del proyecto** | 10d | 2019-03-19 | 2019-03-28 |  | 0d |  |
| 49 | 1.3.8.1 | Desmovilización del personal | 2d | 2019-03-19 | 2019-03-20 | 45FS+5d | 0d |  |
| 50 | 1.3.8.2 | Elaboración del informe final | 7d | 2019-03-21 | 2019-03-27 | 49 | 0d |  |
| 51 | 1.3.8.3 | Entrega de documentación generada del proyecto | 1d | 2019-03-28 | 2019-03-28 | 50 | 0d |  |
