# Seguimiento_Acceso San José_KLPG_04052018

Schedule from MS Project, 2018-04-23 to 2018-05-08, status date 2018-04-28, A marks actual dates.
Hewlett-Packard Company

## Calendars

- KALLPA: Mon-Sat 09:00-13:00, 15:00-19:00; Sun off. Exceptions (off unless hours are given): 2018-05-01 (Dia del trabajo).

## Schedule

| ID | WBS | Task | Type | Duration | Start | Finish | Predecessors | Complete | Remaining | Baseline start | Baseline finish | Baseline duration | Total slack | Constraint |
| --- | --- | --- | --- | --- | --- | --- | --- | --- | --- | --- | --- | --- | --- | --- |
| 1 | 1 | **Consultoría para la adquisición de áreas involucradas en el acceso San José** |  | 12d | 2018-04-23 A | 2018-05-08 |  |  | 12d | 2018-04-23 | 2018-05-08 | 12d | 0d |  |
| 2 | 1.1 | **Inicio y Planificacion** |  | 1d | 2018-04-23 | 2018-04-23 |  |  |  | 2018-04-23 | 2018-04-23 | 1d | 0d |  |
| 3 | 1.1.1 | Revisión de información y formación de equipos |  | 1d | 2018-04-23 | 2018-04-23 |  |  |  | 2018-04-23 | 2018-04-23 | 1d | 0d |  |
| 4 | 1.2 | **Ejecución** |  | 11d | 2018-04-24 | 2018-05-07 |  |  |  | 2018-04-24 | 2018-05-07 | 11d | 0d |  |
| 5 | 1.2.1 | **Valuación del área requerida** |  | 11d | 2018-04-24 | 2018-05-07 |  |  |  | 2018-04-24 | 2018-05-07 | 11d | 0d |  |
| 6 | 1.2.1.1 | Movilización a la zona de trabajo |  | 1d | 2018-04-24 | 2018-04-24 | 3 |  |  | 2018-04-24 | 2018-04-24 | 1d | 0d |  |
| 7 | 1.2.1.2 | Inspección de campo y levantamiento topográficos |  | 2d | 2018-04-25 | 2018-04-26 | 6 |  |  | 2018-04-25 | 2018-04-26 | 2d | 0d |  |
| 8 | 1.2.1.3 | Desmovilización de la zona de trabajo |  | 1d | 2018-04-27 | 2018-04-27 | 7 |  |  | 2018-04-27 | 2018-04-27 | 1d | 0d |  |
| 9 | 1.2.1.4 | Elaboración del planos topográficos |  | 2d | 2018-04-28 | 2018-04-30 | 8 |  |  | 2018-04-28 | 2018-04-30 | 2d | 0d |  |
| 10 | 1.2.1.5 | Elaboración de tasaciones comerciales |  | 4d | 2018-05-02 | 2018-05-05 | 9 |  |  | 2018-05-02 | 2018-05-05 | 4d | 0d |  |
| 11 | 1.2.1.6 | Control de Calidad |  | 1d | 2018-05-07 | 2018-05-07 | 10 |  |  | 2018-05-07 | 2018-05-07 | 1d | 0d |  |
| 12 | 1.3 | **Cierre** |  | 0d | 2018-05-08 A | 2018-05-08 |  |  | 0d | 2018-05-08 | 2018-05-08 | 0d | 0d |  |
| 13 | 1.3.1 | Entrega al cliente | milestone | 0d | 2018-05-08 | 2018-05-08 | 11 |  |  | 2018-05-08 | 2018-05-08 | 0d | 0d | start no earlier than 2018-05-08 |
| 14 | 1.3.2 | Cierre de Proyecto | milestone | 0d | 2018-05-08 A | 2018-05-08 A |  | 100% |  | 2018-05-08 | 2018-05-08 | 0d |  |  |
