# GRENERGY_Gestión Predial_Bayovar

Schedule from MS Project, 2017-11-27 to 2018-02-21.

## Calendars

- JPP: Mon-Sun 09:00-13:00, 15:00-19:00. Exceptions (off unless hours are given): 2017-12-15 to 2018-01-05 (Solicitado cliente).

## Schedule

| ID | WBS | Task | Type | Duration | Start | Finish | Predecessors | Total slack | Constraint |
| --- | --- | --- | --- | --- | --- | --- | --- | --- | --- |
| 1 | 1 | **Valuación Comercial - PM Haquira** |  | 65d | 2017-11-27 | 2018-02-21 |  | 0d |  |
| 2 | 1.1 | **Hitos** |  | 50d | 2017-12-09 | 2018-02-19 |  | 2d |  |
| 3 | 1.1.1 | Planos de análisis de los predios | milestone | 0d | 2017-12-09 | 2017-12-09 | 12 | 52d |  |
| 4 | 1.1.2 | Valuación Comercial - PM Huaquira | milestone | 0d | 2018-02-14 | 2018-02-14 | 15 | 7d |  |
| 5 | 1.1.3 | Entregable final | milestone | 0d | 2018-02-19 | 2018-02-19 | 16 | 2d |  |
| 6 | 1.2 | **Inicio y Planificación** |  | 3d | 2017-11-27 | 2017-11-30 |  | 0d |  |
| 7 | 1.2.1 | Conformación y alineamiento de equipo |  | 2d | 2017-11-27 | 2017-11-28 |  | 0d |  |
| 8 | 1.2.2 | Elaboración del plan de trabajo |  | 1d | 2017-11-29 | 2017-11-29 | 7 | 0d |  |
| 9 | 1.2.3 | Aprobación del Plan de trabajo | milestone | 0d | 2017-11-30 | 2017-11-30 | 8 | 0d | start no earlier than 2017-11-30 |
| 10 | 1.3 | **Ejecución y Monitoreo** |  | 60d | 2017-11-30 | 2018-02-19 | 6 | 0d |  |
| 11 | 1.3.1 | Revisión de Antecedentes |  | 10d | 2017-11-30 | 2017-12-09 |  | 0d |  |
| 12 | 1.3.2 | Composición del mosaico cartográfico |  | 5d | 2017-12-05 | 2017-12-09 | 11SS+5d | 0d |  |
| 13 | 1.3.3 | Estudio para determinar el precio de predios rurales |  | 25d | 2017-12-10 | 2018-01-25 | 12 | 0d |  |
| 14 | 1.3.4 | Elaboración del plano de análisis |  | 5d | 2018-01-26 | 2018-01-30 | 13 | 0d |  |
| 15 | 1.3.5 | Elaboración de la valuación comercial |  | 15d | 2018-01-31 | 2018-02-14 | 14 | 0d |  |
| 16 | 1.3.6 | Control de Calidad |  | 5d | 2018-02-15 | 2018-02-19 | 15 | 0d |  |
| 17 | 1.4 | **Cierre de Proyecto** |  | 2d | 2018-02-20 | 2018-02-21 | 10 | 0d |  |
| 18 | 1.4.1 | Informe de gestión proyecto |  | 2d | 2018-02-20 | 2018-02-21 |  | 0d |  |
| 19 | 1.4.2 | Entrega Informe Final | milestone | 0d | 2018-02-21 | 2018-02-21 | 18 | 0d |  |
