# Cronograma_CdA_Tasación zona embalse y predio Pacopata_v0

Schedule from MS Project, 2018-08-24 to 2018-08-29, status date 2017-03-16.
Microsoft

## Calendars

- dias calendario: Mon-Sat 08:00-17:00; Sun off.

## Schedule

| ID | WBS | Task | Type | Duration | Start | Finish | Predecessors | Baseline start | Baseline finish | Baseline duration | Total slack | Constraint |
| --- | --- | --- | --- | --- | --- | --- | --- | --- | --- | --- | --- | --- |
| 1 | 1 | **Tasación Comercial predios La Esperanza y La Esperanza N° 2** |  | 5d | 2018-08-24 | 2018-08-29 |  | 2018-07-21 | 2018-08-01 | 10d | 0d |  |
| 2 | 1.1 | **Inicio** |  | 0d | 2018-08-24 | 2018-08-24 |  | 2018-07-21 | 2018-07-21 | 0d | 5d |  |
| 3 | 1.1.1 | Inicio de proyecto | milestone | 0d | 2018-08-24 | 2018-08-24 |  | 2018-07-21 | 2018-07-21 | 0d | 5d | start no earlier than 2018-08-24 |
| 4 | 1.2 | **Ejecución** |  | 5d | 2018-08-24 | 2018-08-29 |  | 2018-07-22 | 2018-08-01 | 10d | 0d |  |
| 5 | 1.2.1 | **Trabajo de Campo** |  | 3d | 2018-08-24 | 2018-08-27 |  | 2018-07-22 | 2018-07-24 | 3d | 0d |  |
| 6 | 1.2.1.1 | Movilización a la zona de trabajo |  | 1d | 2018-08-24 | 2018-08-24 |  | 2018-07-22 | 2018-07-22 | 0.5d | 0d | start no earlier than 2018-08-24 |
| 7 | 1.2.1.2 | Inducción de seguridad |  | 0.15d | 2018-08-25 | 2018-08-25 | 6 |  |  |  | 0d |  |
| 8 | 1.2.1.3 | Inspección de campo |  | 1.5d | 2018-08-25 | 2018-08-27 | 7 | 2018-07-22 | 2018-07-24 | 2d | 0d |  |
| 9 | 1.2.1.4 | Estudio inmobiliario local |  | 1.5d | 2018-08-25 | 2018-08-27 | 7 | 2018-07-22 | 2018-07-24 | 2d | 0d |  |
| 10 | 1.2.1.5 | Desmovilización de la zona de trabajo |  | 0.35d | 2018-08-27 | 2018-08-27 | 9, 8 | 2018-07-24 | 2018-07-24 | 0.5d | 0d |  |
| 11 | 1.2.2 | **Trabajo de gabinete** |  | 2d | 2018-08-27 | 2018-08-29 |  | 2018-07-24 | 2018-08-01 | 7d | 0d |  |
| 12 | 1.2.2.1 | Elaboración de Tasación Comercial |  | 1.5d | 2018-08-27 | 2018-08-29 | 10 | 2018-07-27 | 2018-07-31 | 3d | 0d |  |
| 13 | 1.2.2.2 | Control de calidad |  | 0.5d | 2018-08-29 | 2018-08-29 | 12 | 2018-07-31 | 2018-08-01 | 1d | 0d |  |
| 14 | 1.3 | **Cierre** |  | 0d | 2018-08-29 | 2018-08-29 |  | 2018-08-01 | 2018-08-01 | 0d | 0d |  |
| 15 | 1.3.1 | Entrega al cliente | milestone | 0d | 2018-08-29 | 2018-08-29 | 13 | 2018-08-01 | 2018-08-01 | 0d | 0d |  |
| 16 | 1.3.2 | Cierre de proyecto | milestone | 0d | 2018-08-29 | 2018-08-29 | 15 | 2018-08-01 | 2018-08-01 | 0d | 0d | start no earlier than 2018-08-06 |
