Schedule from MS Project, 2018-02-06 to 2018-05-06.
Microsoft

## Calendars

- Inscripción de contratos CC Paucas y Pirusto: Mon-Sun 08:00-13:00, 14:00-17:00. Exceptions (off unless hours are given): 2018-03-29 to 2018-03-30 (semana santa), 2018-05-01 (día del trabajador).

## Schedule

| ID | WBS | Task | Type | Duration | Start | Finish | Predecessors | Total slack | Free slack | Constraint |
| --- | --- | --- | --- | --- | --- | --- | --- | --- | --- | --- |
| 1 | 1 | **Proyecto CC. Paucas y Pirusto** |  | 86.88d | 2018-02-06 | 2018-05-06 |  | 0d |  |  |
| 2 | 1.1 | **Hitos** |  | 84.88d | 2018-02-06 | 2018-05-04 |  | 2d |  |  |
| 3 | 1.1.1 | Aceptación de la propuesta | milestone | 0d | 2018-02-06 | 2018-02-06 |  | 4.88d |  |  |
| 4 | 1.1.2 | Formación de expediente 250 ha_CC Paucas | milestone | 0d | 2018-03-28 | 2018-03-28 | 14 | 36d |  |  |
| 5 | 1.1.3 | Formación de expediente 46.7758 ha_CC Paucas | milestone | 0d | 2018-03-28 | 2018-03-28 | 15 | 36d |  |  |
| 6 | 1.1.4 | Formación de expediente 248.22 ha_CC Pirusto | milestone | 0d | 2018-03-28 | 2018-03-28 | 18 | 36d |  |  |
| 7 | 1.1.5 | Presentación de títulos en Sunarp | milestone | 0d | 2018-05-04 | 2018-05-04 | 21, 20 | 2d |  |  |
| 8 | 1.2 | **Inicio y Planificación** |  | 86.88d | 2018-02-06 | 2018-05-06 |  | 0d |  |  |
| 9 | 1.2.1 | Conformacion y alimeamiento de equipo |  | 1d | 2018-02-06 | 2018-02-07 |  | 77.88d | 0d |  |
| 10 | 1.2.2 | Reunión de coordinación |  | 2d | 2018-02-07 | 2018-02-09 | 9 | 77.88d |  | finish no earlier than 2018-02-07 |
| 11 | 1.2.3 | **Ejecución y Monitoreo** |  | 81d | 2018-02-10 | 2018-05-04 |  | 0d |  |  |
| 12 | 1.2.3.1 | Movilización a la zona de trabajo |  | 2d | 2018-02-10 | 2018-02-11 |  | 0d |  | finish no earlier than 2018-02-11 |
| 13 | 1.2.3.2 | **Huaraz** |  | 45d | 2018-02-12 | 2018-03-28 |  | 36d |  |  |
| 14 | 1.2.3.2.1 | Trámites en el GORE - Certificado negativo de zona catastrada. 250 ha., y 46.7758 ha. |  | 45d | 2018-02-12 | 2018-03-28 | 12 | 30d |  |  |
| 15 | 1.2.3.2.2 | Trámites ante COFORPI - Constancia de inexistencia de posesiones informales. 250 ha., y 46.7758 ha. |  | 45d | 2018-02-12 | 2018-03-28 | 12 | 30d |  |  |
| 16 | 1.2.3.3 | **Huánuco** |  | 45d | 2018-02-12 | 2018-03-28 |  | 0d |  |  |
| 17 | 1.2.3.3.1 | Trámites en el GORE - Certificado negativo de zona catastrada. 248.22 ha |  | 45d | 2018-02-12 | 2018-03-28 | 12 | 30d |  |  |
| 18 | 1.2.3.3.2 | Trámites ante COFORPI - Constancia de inexistencia de posesiones informales. 248.22 ha. |  | 45d | 2018-02-12 | 2018-03-28 | 12 | 0d |  |  |
| 19 | 1.2.3.4 | **Inscripción de títulos en la SUNARP** |  | 34d | 2018-03-31 | 2018-05-04 |  | 0d |  |  |
| 20 | 1.2.3.4.1 | Trámite de inscripción Oficina Huaraz |  | 34d | 2018-03-31 | 2018-05-04 | 18 | 2d | 0d |  |
| 21 | 1.2.3.4.2 | Trámite de inscripción Oficina Huánuco |  | 34d | 2018-03-31 | 2018-05-04 | 18 | 0d |  |  |
| 22 | 1.2.4 | **Cierre de proyecto** |  | 2d | 2018-05-05 | 2018-05-06 |  | 0d |  |  |
| 23 | 1.2.4.1 | Desmovilización a Lima |  | 1d | 2018-05-05 | 2018-05-05 | 21 | 0d |  |  |
| 24 | 1.2.4.2 | Acta de cierre |  | 1d | 2018-05-06 | 2018-05-06 | 23 | 0d |  |  |
