# Gantt AGR-Pangoa-Cubantia-

Schedule from MS Project, 2017-08-15 to 2018-01-11, A marks actual dates.

## Calendars

- JPP calendario: Mon-Fri 09:00-13:00, 15:00-19:00; Sat-Sun 09:00-17:00.

## Resources

| Resource |
| --- |
| Aalaya |
| Amaguiña |
| Avillanueva |
| Cbarreto |
| Cchirre |
| Chulzano |
| Cormeño |
| Ecuadros |
| Ehilares |
| Ejimenez |
| Equispe |
| Esalazar |
| Gcornejo |
| Hoscorima |
| HVelasquez |
| Jegoavil |
| Jgavancho |
| Jmachacuay |
| Jnunez |
| Jpacheco |
| Lcepedes |
| Mmata |
| Mperez |
| Mpino |
| Mpolo |
| Mpuerta |
| Mreyes |
| Mzevallos |
| Nalaya |
| Orodriguez |
| Pjayo |
| Rolarte |
| Rpaulino |
| Ruvidia |
| Saguayo |
| Sdelgado |
| Stimoteo |

## Schedule

| ID | WBS | Task | Type | Duration | Start | Finish | Predecessors | Complete | Remaining | Total slack | Free slack |
| --- | --- | --- | --- | --- | --- | --- | --- | --- | --- | --- | --- |
| 1 | 1 | **AGR_ Pangoa Cubantia** |  | 150d | 2017-08-15 A | 2018-01-11 |  | 9% | 135.75d | 0d |  |
| 2 | 1.1 | **Hitos** |  | 150d | 2017-08-15 A | 2018-01-11 |  |  | 150d | 0d |  |
| 3 | 1.1.1 | Firma de contrato | milestone | 0d | 2017-08-15 A | 2017-08-15 A |  | 100% |  |  |  |
| 4 | 1.1.2 | E:1A Cargo final de búsquedas catastrales, Cargo de carta Tasación | milestone | 0d | 2017-09-03 | 2017-09-03 | 3FS+20d |  |  | 130d |  |
| 5 | 1.1.3 | E:1B Honorario DC y Lev Observaciones | milestone | 0d | 2017-09-23 | 2017-09-23 | 3FS+40d |  |  | 110d |  |
| 6 | 1.1.4 | E:2 Informe final de BC y subsanaciones | milestone | 0d | 2017-10-13 | 2017-10-13 | 3FS+60d |  |  | 90d |  |
| 7 | 1.1.5 | E:3 Rev, Tasaciones, lev. Obs, publicaciones y noticaciones | milestone | 0d | 2017-11-12 | 2017-11-12 | 3FS+90d |  |  | 60d |  |
| 8 | 1.1.6 | E:4 Inf. total de sujetos pasivos | milestone | 0d | 2017-12-22 | 2017-12-22 | 3FS+130d |  |  | 20d |  |
| 9 | 1.1.7 | E:5 Proyectos de Resol de Pago en el MTC | milestone | 0d | 2018-01-11 | 2018-01-11 | 3FS+150d |  |  | 0d |  |
| 10 | 1.2 | **Inicio y Planificación** |  | 7d | 2017-08-15 A | 2017-08-21 |  | 71% | 2d | 0d |  |
| 11 | 1.2.1 | Conformación de equipo de trabajo |  | 3d | 2017-08-15 A | 2017-08-17 A |  | 100% |  |  |  |
| 12 | 1.2.2 | Acta de Inicio |  | 2d | 2017-08-18 | 2017-08-19 | 11 |  |  | 2d |  |
| 13 | 1.2.3 | Inducción del proyecto |  | 2d | 2017-08-20 A | 2017-08-21 A | 12 | 100% |  |  |  |
| 14 | 1.2.4 | Aprobación del acta de inicio | milestone | 0d | 2017-08-21 | 2017-08-21 | 13 |  |  | 0d |  |
| 15 | 1.3 | **Ejecución - Seguimiento y Control** |  | 113d | 2017-08-22 A | 2017-12-12 | 10 | 8% | 104.38d | 30d | 0d |
| 16 | 1.3.1 | Revisión de plano guía del tramo en estudio (0/73) |  | 1d | 2017-08-22 A | 2017-08-22 A |  | 100% |  |  |  |
| 17 | 1.3.2 | Revisión de antecedentes por predio (0/73) |  | 2d | 2017-08-23 A | 2017-08-24 A | 16 | 100% |  |  |  |
| 18 | 1.3.3 | Planilla de seguimiento de predios (0/73) |  | 1d | 2017-08-25 A | 2017-08-25 A | 17 | 100% |  |  |  |
| 19 | 1.3.4 | **Búsqueda Catastral** |  | 52d | 2017-08-23 A | 2017-10-13 | 3FS+8d | 11% | 46.38d | 90d |  |
| 20 | 1.3.4.1 | Plano y memoria para búsqueda catastral Est. SUNARP 0/73 |  | 9d | 2017-08-23 A | 2017-08-31 |  | 90% | 0.9d | 30d | 0d |
| 21 | 1.3.4.2 | E1A | milestone | 0d | 2017-09-03 | 2017-09-03 | 3FS+20d |  |  | 130d |  |
| 22 | 1.3.4.3 | Trámite de búsqueda catastral |  | 20d | 2017-09-01 | 2017-09-20 | 20 |  |  | 30d | 0d |
| 23 | 1.3.4.4 | Subsanación de observaciones |  | 18d | 2017-09-03 | 2017-09-20 | 22FF |  |  | 30d | 0d |
| 24 | 1.3.4.5 | Obtención de búsquedas catastrales |  | 10d | 2017-09-21 | 2017-09-30 | 23, 22 |  |  | 30d | 0d |
| 25 | 1.3.4.6 | Interpretación y análisis de búsquedas |  | 5d | 2017-09-26 | 2017-09-30 | 24SS+5d |  |  | 30d | 0d |
| 26 | 1.3.4.7 | Clasificación de certificados de búsqueda catastral |  | 3d | 2017-10-01 | 2017-10-03 | 25 |  |  | 90d | 0d |
| 27 | 1.3.4.8 | Elaboración de informe |  | 10d | 2017-10-04 | 2017-10-13 | 26 |  |  | 90d | 0d |
| 28 | 1.3.4.9 | E2 | milestone | 0d | 2017-10-13 | 2017-10-13 | 27 |  |  | 90d |  |

| ID | WBS | Task | Type | Duration | Start | Finish | Predecessors | Complete | Remaining | Total slack | Free slack |
| --- | --- | --- | --- | --- | --- | --- | --- | --- | --- | --- | --- |
| 29 | 1.3.5 | **Actualización de expedientes, (act. Inventario de activos)** |  | 32d | 2017-08-23 A | 2017-09-23 | 3FS+8d | 17% | 26.57d | 110d |  |
| 30 | 1.3.5.1 | Notificación de visita |  | 3d | 2017-08-23 | 2017-08-25 |  |  |  | 2.8d | 0d |
| 31 | 1.3.5.2 | Recorrido de campo |  | 7d | 2017-08-26 A | 2017-09-01 | 30 | 40% | 4.2d | 132d | 0d |
| 32 | 1.3.5.3 | Identificación / propiedad / posesión de sujeto pasivo |  | 7d | 2017-08-26 A | 2017-09-01 | 31SS | 40% | 4.2d | 132d |  |
| 33 | 1.3.5.4 | PP, MD |  | 8d | 2017-08-23 | 2017-08-30 | 20SS |  |  | 134d |  |
| 34 | 1.3.5.5 | Perjuicio económico |  | 8d | 2017-08-23 | 2017-08-30 | 20SS |  |  | 134d |  |
| 35 | 1.3.5.6 | E1A Presentación de Exp. a la DC | milestone | 0d | 2017-09-01 | 2017-09-01 | 31 |  |  | 132d |  |
| 36 | 1.3.5.7 | E1B Carta de DC de monto servicio de tasación/Informe de Rev. (de requerir). | milestone | 0d | 2017-09-23 | 2017-09-23 | 31SF+29d |  |  | 110d |  |
| 37 | 1.3.6 | **Gestión de trato directo** |  | 73d | 2017-10-01 | 2017-12-12 |  |  |  | 30d |  |
| 38 | 1.3.6.1 | Revisar Tasaciones |  | 20d | 2017-10-01 | 2017-10-20 | 25 |  |  | 83d |  |
| 39 | 1.3.6.2 | Publicaciones realizadas |  | 20d | 2017-10-01 | 2017-10-20 | 25 |  |  | 83d |  |
| 40 | 1.3.6.3 | Notificación de sujetos pasivos |  | 30d | 2017-10-01 | 2017-10-30 | 25 |  |  | 73d |  |
| 41 | 1.3.6.4 | Solicitar CRI |  | 20d | 2017-10-01 | 2017-10-20 | 25 |  |  | 30d | 0d |
| 42 | 1.3.6.5 | E3 | milestone | 0d | 2017-11-12 | 2017-11-12 | 41FF+23d |  |  | 30d | 0d |
| 43 | 1.3.6.6 | Informe final de notificación de pasivos |  | 10d | 2017-11-13 | 2017-11-22 | 42 |  |  | 30d | 0d |
| 44 | 1.3.6.7 | E4 | milestone | 0d | 2017-11-22 | 2017-11-22 | 43 |  |  | 50d |  |
| 45 | 1.3.6.8 | Proyectos de resolución en la Secretaria del MTC |  | 20d | 2017-11-23 | 2017-12-12 | 43 |  |  | 30d | 0d |
| 46 | 1.3.6.9 | E5 | milestone | 0d | 2017-12-12 | 2017-12-12 | 45 |  |  | 30d |  |
| 47 | 1.4 | **Cierre de Proyecto** |  | 0d | 2017-12-12 | 2017-12-12 | 15 |  |  | 30d |  |
| 48 | 1.4.1 | Entrega final de expedientes de servidumbre impresos | milestone | 0d | 2017-12-12 | 2017-12-12 |  |  |  | 30d |  |
