# Negociación_HMA_V97

Schedule from MS Project, 2017-10-12 to 2017-12-22.
Microsoft

## Calendars

- Hidromarañón: Mon-Sun 08:00-13:00, 14:00-18:00.

## Schedule

| ID | WBS | Task | Type | Duration | Start | Finish | Predecessors | Total slack | Free slack | Constraint |
| --- | --- | --- | --- | --- | --- | --- | --- | --- | --- | --- |
| 1 | 1 | **Proceso de Negociación - Proyecto Hidromarañón** |  | 80.88d? | 2017-10-12 | 2017-12-22 |  | 0d |  |  |
| 2 | 1.1 | **Hitos** |  | 77.12d | 2017-10-12 | 2017-12-19 |  | 3.75d |  |  |
| 3 | 1.1.1 | Aceptación de la propuesta | milestone | 0d | 2017-10-12 | 2017-10-12 |  | 80.88d |  |  |
| 4 | 1.1.2 | Informe de valuación comercial | milestone | 0d | 2017-10-22 | 2017-10-22 | 18 | 69.38d |  |  |
| 5 | 1.1.3 | Acta aclaratoria de compra de 30.30 ha del año 2009 | milestone | 0d | 2017-10-12 | 2017-10-12 |  | 80.88d |  |  |
| 6 | 1.1.4 | Escritura pública de compra de 5 lotes del año 2013 | milestone | 0d | 2017-10-12 | 2017-10-12 |  | 80.88d |  |  |
| 7 | 1.1.5 | Acta de acuerdo por la compra de las 3.5 ha áreas adicionales | milestone | 0d | 2017-11-06 | 2017-11-06 | 23 | 51.75d |  |  |
| 8 | 1.1.6 | Certificado negativo de zona catastrada | milestone | 0d | 2017-12-19 | 2017-12-19 | 25 | 3.75d |  |  |
| 9 | 1.1.7 | Constancia de inexistencia de posesiones informales | milestone | 0d | 2017-12-19 | 2017-12-19 | 26 | 3.75d |  |  |
| 10 | 1.2 | **Inicio y Planificación** |  | 2.12d? | 2017-10-12 | 2017-10-13 |  | 0d |  |  |
| 11 | 1.2.1 | Inicio y Planificación | milestone | 0d? | 2017-10-12 | 2017-10-12 |  | 0d |  | must start on 2017-10-12 |
| 12 | 1.2.2 | Conformacion y alimeamiento de equipo |  | 1d | 2017-10-12 | 2017-10-12 |  | 3.88d | 0d |  |
| 13 | 1.2.3 | Reunión de coordinación |  | 1d | 2017-10-13 | 2017-10-13 | 12 | 3.88d | 0.25d | start no earlier than 2017-10-13 |
| 14 | 1.2.4 | Kick off meeting |  | 1d | 2017-10-13 | 2017-10-13 | 12 | 78.75d |  | finish no earlier than 2017-10-13 |
| 15 | 1.3 | **Ejecución y Monitoreo** |  | 74.88d | 2017-10-14 | 2017-12-19 |  | 3.62d |  |  |
| 16 | 1.3.1 | Movilización a la zona de trabajo |  | 2d | 2017-10-14 | 2017-10-15 | 13 | 3.62d | 0.25d | start no earlier than 2017-10-14 |
| 17 | 1.3.2 | Presentación del equipo de negociación ante la junta directiva de la C.C. Palanca |  | 1d | 2017-10-16 | 2017-10-16 | 16 | 3.38d | 0d | start no earlier than 2017-10-16 |
| 18 | 1.3.3 | Valuación comercial de área requerida con fines de compra |  | 7d | 2017-10-16 | 2017-10-22 | 16 | 69.38d | 0d | start no earlier than 2017-10-16 |
| 19 | 1.3.4 | Entrega de carta de invitación a la junta directiva de la C.C. y comuneros para iniciar el proceso de negociación y compra de tierras |  | 12d | 2017-10-17 | 2017-10-27 | 17 | 3.38d | 0.5d |  |
| 20 | 1.3.5 | Reunión con la junta directiva |  | 1d | 2017-10-28 | 2017-10-28 | 19 | 2.88d | 0d | start no earlier than 2017-10-28 |
| 21 | 1.3.6 | Asamblea General extraordinaria - aprobación de acuerdo y suscripción de Acta de Acuerdo para la compra de las 3.5 ha |  | 1d | 2017-10-29 | 2017-10-29 | 20 | 2.88d | 0.25d |  |
| 22 | 1.3.7 | Trámite de inscripción del Acta de Acuerdo en los Registros Públicos - Registros de personas jurídicas |  | 7d | 2017-10-30 | 2017-11-05 | 21 | 2.62d | 0.88d | start no earlier than 2017-10-30 |
| 23 | 1.3.8 | Suscripción del Contrato de Compra-Venta de lo 5 lotes (3.5 ha) a favor de Hidromarañón S.C.R.L. |  | 1d | 2017-11-06 | 2017-11-06 | 22 | 1.75d | 0d | start no earlier than 2017-11-06 |
| 24 | 1.3.9 | Trámite de inscripción del contrato de compra venta en los Registros Públicos |  | 7d | 2017-11-07 | 2017-11-13 | 23 | 1.62d | 0.88d | start no earlier than 2017-11-07 |
| 25 | 1.3.10 | Trámites ante el GORE - Huánuco para el Certificado negativo de zona catastrada |  | 40d | 2017-11-14 | 2017-12-19 | 24 | 3.75d | 0d | start no earlier than 2017-11-14 |
| 26 | 1.3.11 | Trámites ante el GORE - Huánuco para la Constancia de inexistencia de posesiones informales |  | 40d | 2017-11-14 | 2017-12-19 | 24 | 0.75d | 0d | start no earlier than 2017-11-14 |

| ID | WBS | Task | Duration | Start | Finish | Predecessors | Total slack | Constraint |
| --- | --- | --- | --- | --- | --- | --- | --- | --- |
| 27 | 1.4 | **Cierre de proyecto** | 3.25d | 2017-12-20 | 2017-12-22 |  | 0d |  |
| 28 | 1.4.1 | Desmovilización a Lima | 2d | 2017-12-20 | 2017-12-21 | 26 | 0.25d | start no earlier than 2017-12-20 |
| 29 | 1.4.2 | Acta de cierre | 1d | 2017-12-22 | 2017-12-22 | 28 | 0d | start no earlier than 2017-12-22 |
