# Provias Juanjui-Tocache_25082017

Schedule from MS Project, 2017-08-15 to 2018-02-10, A marks actual dates.

## Calendars

- JPP calendario: Mon-Fri 09:00-13:00, 15:00-19:00; Sat-Sun 09:00-17:00.

## Resources

| Resource |
| --- |
| Aalaya |
| Amaguiña |
| Avillanueva |
| Cbarreto |
| Cchirre |
| Chulzano |
| Cormeño |
| Ecuadros |
| Ehilares |
| Ejimenez |
| Equispe |
| Esalazar |
| Gcornejo |
| Hoscorima |
| HVelasquez |
| Jegoavil |
| Jgavancho |
| Jmachacuay |
| Jnunez |
| Jpacheco |
| Lcepedes |
| Mmata |
| Mperez |
| Mpino |
| Mpolo |
| Mpuerta |
| Mreyes |
| Mzevallos |
| Nalaya |
| Orodriguez |
| Pjayo |
| Rolarte |
| Rpaulino |
| Ruvidia |
| Saguayo |
| Sdelgado |
| Stimoteo |

## Schedule

| ID | WBS | Task | Type | Duration | Start | Finish | Predecessors | Complete | Remaining | Total slack | Free slack |
| --- | --- | --- | --- | --- | --- | --- | --- | --- | --- | --- | --- |
| 1 | 1 | **ECCCAEI_ Juanji - Tocache (180** |  | 180d | 2017-08-15 A | 2018-02-10 |  | 34% | 118.29d | 0d |  |
| 2 | 1.1 | **Hitos** |  | 180d | 2017-08-15 A | 2018-02-10 |  |  | 180d | 0d |  |
| 3 | 1.1.1 | Firma de contrato | milestone | 0d | 2017-08-15 A | 2017-08-15 A |  | 100% |  |  |  |
| 4 | 1.1.2 | E:1 Cargo final de búsquedas catastrales | milestone | 0d | 2017-09-13 A | 2017-09-13 A | 3FS+30d | 100% |  |  |  |
| 5 | 1.1.3 | E:2 Cargo de carta Tasación, Honorario DC y Lev Observaciones | milestone | 0d | 2017-09-28 | 2017-09-28 | 3FS+45d |  |  | 135d |  |
| 6 | 1.1.4 | E:3 Informe final de BC y subsanaciones | milestone | 0d | 2017-10-28 | 2017-10-28 | 3FS+75d |  |  | 105d |  |
| 7 | 1.1.5 | E:4 Rev, Tasaciones, Dsp. Presupuestal | milestone | 0d | 2017-11-27 | 2017-11-27 | 3FS+105d |  |  | 75d |  |
| 8 | 1.1.6 | E:5 Inf. Tec de sujetos pasivos y proyectos de Resol. | milestone | 0d | 2018-01-21 | 2018-01-21 | 3FS+160d |  |  | 20d |  |
| 9 | 1.1.7 | E:6 Proyectos de Resol de Pago en el MTC | milestone | 0d | 2018-02-10 | 2018-02-10 | 3FS+180d |  |  | 0d |  |
| 10 | 1.2 | **Inicio y Planificación** |  | 7d | 2017-08-15 A | 2017-08-21 A |  | 100% |  |  |  |
| 11 | 1.2.1 | Conformación de equipo de trabajo |  | 3d | 2017-08-15 A | 2017-08-17 A |  | 100% |  |  |  |
| 12 | 1.2.2 | Acta de Inicio |  | 2d | 2017-08-18 A | 2017-08-19 A | 11 | 100% |  |  |  |
| 13 | 1.2.3 | Inducción del proyecto |  | 2d | 2017-08-20 A | 2017-08-21 A | 12 | 100% |  |  |  |
| 14 | 1.2.4 | Aprobación del acta de inicio | milestone | 0d | 2017-08-21 A | 2017-08-21 A | 13 | 100% |  |  |  |
| 15 | 1.3 | **Ejecución - Seguimiento y Control** |  | 125d | 2017-08-22 A | 2017-12-24 | 10 | 33% | 83.69d | 43d | 0d |
| 16 | 1.3.1 | Revisión de plano guía del tramo en estudio (0/87) |  | 1d | 2017-08-22 A | 2017-08-22 A |  | 100% |  |  |  |
| 17 | 1.3.2 | Revisión de antecedentes por predio (0/87) |  | 2d | 2017-08-23 A | 2017-08-24 A | 16 | 100% |  |  |  |
| 18 | 1.3.3 | Planilla de seguimiento de predios (0/87) |  | 2d | 2017-08-25 A | 2017-08-26 A | 17 | 100% |  |  |  |
| 19 | 1.3.4 | **Búsqueda Catastral** |  | 59d | 2017-08-27 A | 2017-10-24 | 18 | 47% | 31.01d | 104d |  |
| 20 | 1.3.4.1 | Plano y memoria para búsqueda catastral Est. SUNARP 0/87 |  | 16d | 2017-08-27 A | 2017-09-11 A |  | 100% |  |  |  |
| 21 | 1.3.4.2 | E1 | milestone | 0d | 2017-09-11 A | 2017-09-11 A | 20 | 100% |  |  |  |
| 22 | 1.3.4.3 | Trámite de búsqueda catastral |  | 21d | 2017-09-12 A | 2017-10-02 A | 20 | 100% |  |  |  |
| 23 | 1.3.4.4 | Subsanación de observaciones |  | 14d | 2017-09-19 | 2017-10-02 | 22FF |  |  | 104d | 0d |
| 24 | 1.3.4.5 | Obtención de búsquedas catastrales |  | 10d | 2017-10-03 | 2017-10-12 | 23, 22 |  |  | 104d | 0d |
| 25 | 1.3.4.6 | Interpretación y análisis de búsquedas |  | 10d | 2017-10-08 | 2017-10-17 | 24SS+5d |  |  | 104d | 0d |
| 26 | 1.3.4.7 | Clasificación de certificados de búsqueda catastral |  | 7d | 2017-10-18 | 2017-10-24 | 25 |  |  | 104d | 0d |
| 27 | 1.3.4.8 | E3 | milestone | 0d | 2017-10-24 | 2017-10-24 | 26 |  |  | 104d |  |

| ID | WBS | Task | Type | Duration | Start | Finish | Predecessors | Complete | Remaining | Total slack | Free slack |
| --- | --- | --- | --- | --- | --- | --- | --- | --- | --- | --- | --- |
| 28 | 1.3.5 | **Actualización de expedientes, (act. Inventario de activos)** |  | 25d | 2017-08-27 A | 2017-09-20 |  | 78% | 5.56d | 43d | 0d |
| 29 | 1.3.5.1 | Revisión de antecedentes de campo |  | 2d | 2017-08-27 A | 2017-08-28 A | 18 | 100% |  |  |  |
| 30 | 1.3.5.2 | Notificación de visita |  | 3d | 2017-08-29 A | 2017-08-31 A | 29 | 100% |  |  |  |
| 31 | 1.3.5.3 | Recorrido de campo |  | 10d | 2017-09-01 A | 2017-09-10 A | 30 | 100% |  |  |  |
| 32 | 1.3.5.4 | Identificación / propiedad / posesión de sujeto pasivo |  | 10d | 2017-09-01 A | 2017-09-10 A | 31SS | 100% |  |  |  |
| 33 | 1.3.5.5 | PP, MD |  | 10d | 2017-09-11 A | 2017-09-20 A | 32 | 100% |  |  |  |
| 34 | 1.3.5.6 | Perjuicio económico |  | 10d | 2017-09-11 | 2017-09-20 | 32 |  |  | 43d | 0d |
| 35 | 1.3.5.7 | E:2 Presentación a la DC | milestone | 0d | 2017-09-20 | 2017-09-20 | 34 |  |  | 43d |  |
| 36 | 1.3.6 | **Gestión de trato directo** |  | 95d | 2017-09-21 | 2017-12-24 | 28 |  |  | 43d |  |
| 37 | 1.3.6.1 | Revisar Tasaciones |  | 10d | 2017-09-21 | 2017-09-30 |  |  |  | 63d | 0d |
| 38 | 1.3.6.2 | E4 | milestone | 0d | 2017-09-30 | 2017-09-30 | 37 |  |  | 63d | 20d |
| 39 | 1.3.6.3 | Solicitar CRI |  | 30d | 2017-09-21 | 2017-10-20 |  |  |  | 43d | 0d |
| 40 | 1.3.6.4 | Solicitar a Provias disponibilidad presupuestal |  | 10d | 2017-10-21 | 2017-10-30 | 39, 38 |  |  | 43d | 0d |
| 41 | 1.3.6.5 | Notificación de sujetos pasivos |  | 30d | 2017-10-31 | 2017-11-29 | 40 |  |  | 43d | 0d |
| 42 | 1.3.6.6 | Informe final de notificación de pasivos |  | 5d | 2017-11-30 | 2017-12-04 | 41 |  |  | 43d | 0d |
| 43 | 1.3.6.7 | E5 | milestone | 0d | 2017-12-04 | 2017-12-04 | 42 |  |  | 63d |  |
| 44 | 1.3.6.8 | Proyectos de resolución en la Secretaria del MTC |  | 20d | 2017-12-05 | 2017-12-24 | 42 |  |  | 43d | 0d |
| 45 | 1.3.6.9 | E6 | milestone | 0d | 2017-12-24 | 2017-12-24 | 44 |  |  | 43d |  |
| 46 | 1.4 | **Cierre de Proyecto** |  | 5d | 2017-12-25 | 2017-12-29 | 15 |  |  | 43d |  |
| 47 | 1.4.1 | Elaboración del informe final del servicio |  | 3d | 2017-12-25 | 2017-12-27 |  |  |  | 43d | 0d |
| 48 | 1.4.2 | Informe de gestión proyecto |  | 2d | 2017-12-28 | 2017-12-29 | 47 |  |  | 43d | 0d |
| 49 | 1.4.3 | Entrega final de expedientes de servidumbre impresos | milestone | 0d | 2017-12-29 | 2017-12-29 | 48 |  |  | 43d |  |
