# 06_AAQSA - Cronograma_Negociación Activos AAQSA v3

Schedule from MS Project, 2017-09-18 to 2017-10-03, status date 2014-08-30, A marks actual dates.
Microsoft

## Calendars

- L-S: Mon-Sat 08:00-12:00, 13:00-18:00; Sun off.

## Schedule

| ID | WBS | Task | Type | Duration | Start | Finish | Predecessors | Complete | Remaining | Total slack | Free slack | Constraint |
| --- | --- | --- | --- | --- | --- | --- | --- | --- | --- | --- | --- | --- |
| 1 | 1 | **DIAGNOSTICO PREDIO HUAMPANI** |  | 15d? | 2017-09-18 A | 2017-10-03 |  | 29% | 10.65d? | 0d |  |  |
| 2 | 1.1 | DIAGNOSTICO PREDIO HUAMPANI | milestone | 0d? | 2017-09-18 | 2017-09-18 |  |  |  | 0d |  | must start on 2017-09-18 |
| 3 | 1.2 | DIAGNOSTICO PREDIO HUAMPANI | milestone | 0d? | 2017-10-03 | 2017-10-03 |  |  |  | 0d |  | must finish on 2017-10-03 |
| 4 | 1.3 | **INICIO Y PLANIFICACIÓN** |  | 1d | 2017-09-18 A | 2017-09-18 A |  | 100% |  |  |  |  |
| 5 | 1.3.1 | Conformación de equipo de trabajo |  | 1d | 2017-09-18 A | 2017-09-18 A |  | 100% |  |  |  |  |
| 6 | 1.3.2 | Revisión de antecedentes |  | 1d | 2017-09-18 A | 2017-09-18 A |  | 100% |  |  |  |  |
| 7 | 1.4 | **EJECUCIÓN** |  | 13d | 2017-09-18 A | 2017-10-02 |  | 22% | 10.09d | 1d |  |  |
| 8 | 1.4.1 | Levantamiento Topográfico |  | 3d | 2017-09-18 A | 2017-09-21 A | 4 | 100% |  |  |  |  |
| 9 | 1.4.2 | Recopilación de información SUNARP |  | 4d | 2017-09-20 A | 2017-09-25 | 8SS+2d | 20% | 3.2d | 8d | 0d |  |
| 10 | 1.4.3 | Análisis de documentos recopilados |  | 5d | 2017-09-21 | 2017-09-26 | 9SS+1d |  |  | 0d |  |  |
| 11 | 1.4.4 | Consulta al ANA sobre pozos de agua |  | 1d | 2017-09-27 | 2017-09-27 | 10 |  |  | 0d |  |  |
| 12 | 1.4.5 | Elaboración de PPT |  | 2d | 2017-09-27 | 2017-09-29 | 11 |  |  | 0d |  | start no earlier than 2017-07-20 |
| 13 | 1.4.6 | Elaboración de informe |  | 2d | 2017-09-29 | 2017-10-02 | 12 |  |  | 0d |  |  |
| 14 | 1.5 | **CIERRE DEL PROYECTO** |  | 1d? | 2017-10-02 | 2017-10-03 |  |  |  | 0d |  |  |
| 15 | 1.5.1 | CIERRE DEL PROYECTO | milestone | 0d? | 2017-10-02 | 2017-10-02 |  |  |  | 0d |  | must start on 2017-10-02 |
| 16 | 1.5.2 | CIERRE DEL PROYECTO | milestone | 0d? | 2017-10-03 | 2017-10-03 |  |  |  | 0d |  | must finish on 2017-10-03 |
| 17 | 1.5.3 | Cierre del proyecto |  | 1d | 2017-10-02 | 2017-10-03 | 13 |  |  | 0d |  |  |
