# Gantt_Trujillo-Chicama TC01_V2

Schedule from MS Project, 2017-12-07 to 2018-07-13, status date 2018-01-20, A marks actual dates.

## Calendars

- Todos los días: Mon-Sun 09:00-13:00, 15:00-19:00.

## Schedule

| ID | WBS | Task | Type | Duration | Start | Finish | Predecessors | Complete | Remaining | Baseline start | Baseline finish | Baseline duration | Total slack | Constraint |
| --- | --- | --- | --- | --- | --- | --- | --- | --- | --- | --- | --- | --- | --- | --- |
| 1 | 1 | **PROVIAS_AUTOPISTA DEL SOL_CHICLAYO-LAMBAYEQUE (km 790+542 AL km 000+846)** |  | 219d | 2017-12-07 A | 2018-07-13 |  | 28% | 158.29d | 2017-12-07 | 2018-07-13 | 219d | 0d |  |
| 2 | 1.1 | **Hitos.** |  | 218d | 2017-12-07 A | 2018-07-13 |  |  | 218d | 2017-12-07 | 2018-07-13 | 218d | 1d |  |
| 3 | 1.1.1 | Inicio del servicio | milestone | 0d | 2017-12-07 A | 2017-12-07 A |  | 100% |  | 2017-12-07 | 2017-12-07 | 0d |  | start no earlier than 2017-12-07 |
| 4 | 1.1.2 | Primer entregable | milestone | 0d | 2017-12-26 A | 2017-12-26 A |  | 100% |  | 2017-12-26 | 2017-12-26 | 0d |  | start no earlier than 2017-12-26 |
| 5 | 1.1.3 | Segundo entregable | milestone | 0d | 2018-02-02 A | 2018-02-02 A |  | 100% |  | 2018-02-02 | 2018-02-02 | 0d |  | start no earlier than 2018-02-02 |
| 6 | 1.1.4 | Tercer entregable | milestone | 0d | 2018-03-06 | 2018-03-06 |  |  |  | 2018-03-06 | 2018-03-06 | 0d | 130d | start no earlier than 2018-03-06 |
| 7 | 1.1.5 | Cuarto entregable | milestone | 0d | 2018-04-05 | 2018-04-05 |  |  |  | 2018-04-05 | 2018-04-05 | 0d | 100d | start no earlier than 2018-04-05 |
| 8 | 1.1.6 | Quinto entregable | milestone | 0d | 2018-05-04 | 2018-05-04 |  |  |  | 2018-05-04 | 2018-05-04 | 0d | 71d | start no earlier than 2018-05-04 |
| 9 | 1.1.7 | Sexto entregable | milestone | 0d | 2018-06-04 | 2018-06-04 |  |  |  | 2018-06-04 | 2018-06-04 | 0d | 40d | start no earlier than 2018-06-04 |
| 10 | 1.1.8 | Séptimo entregable | milestone | 0d | 2018-07-04 | 2018-07-04 |  |  |  | 2018-07-04 | 2018-07-04 | 0d | 10d | start no earlier than 2018-07-04 |
| 11 | 1.1.9 | Cierre del servicio | milestone | 0d | 2018-07-13 | 2018-07-13 |  |  |  | 2018-07-13 | 2018-07-13 | 0d | 1d | start no earlier than 2018-07-13 |
| 12 | 1.2 | **Inicio y Planificación** |  | 4d | 2017-12-07 A | 2017-12-10 A |  | 100% |  | 2017-12-07 | 2017-12-10 | 4d |  |  |
| 13 | 1.2.1 | Conformación de la brigada |  | 1d | 2017-12-07 A | 2017-12-07 A | 3 | 100% |  | 2017-12-07 | 2017-12-07 | 1d |  |  |
| 14 | 1.2.2 | Reunión de coordinación entre la brigada |  | 1d | 2017-12-07 A | 2017-12-07 A | 3 | 100% |  | 2017-12-07 | 2017-12-07 | 1d |  | start no earlier than 2017-09-19 |
| 15 | 1.2.3 | Plan de trabajo |  | 3d | 2017-12-08 A | 2017-12-10 A | 14 | 100% |  | 2017-12-08 | 2017-12-10 | 3d |  |  |
| 16 | 1.3 | **Ejecución** |  | 204d | 2017-12-11 A | 2018-07-02 |  | 28% | 147.78d | 2017-12-11 | 2018-07-02 | 204d | 11d |  |
| 17 | 1.3.1 | **Labores preliminares** |  | 5d | 2017-12-11 A | 2017-12-15 A |  | 100% |  | 2017-12-11 | 2017-12-15 | 5d |  |  |
| 18 | 1.3.1.1 | Revisión y análisis de información recibida |  | 4d | 2017-12-11 A | 2017-12-14 A | 15 | 100% |  | 2017-12-11 | 2017-12-14 | 4d |  |  |
| 19 | 1.3.1.2 | Coordinación especialista saneamiento de predios UGDV |  | 1d | 2017-12-15 A | 2017-12-15 A | 18 | 100% |  | 2017-12-15 | 2017-12-15 | 1d |  |  |
| 20 | 1.3.1.3 | Coordinación en IGN para certificación de puntos control |  | 1d | 2017-12-15 A | 2017-12-15 A | 18 | 100% |  | 2017-12-15 | 2017-12-15 | 1d |  |  |
| 21 | 1.3.1.4 | Almacenamiento de información en GPS |  | 1d | 2017-12-15 A | 2017-12-15 A | 18 | 100% |  | 2017-12-15 | 2017-12-15 | 1d |  |  |
| 22 | 1.3.2 | **Labores de campo y gabinete (primer entregable)** |  | 11d | 2017-12-16 A | 2017-12-26 A |  | 100% |  | 2017-12-16 | 2017-12-26 | 11d |  |  |
| 23 | 1.3.2.1 | Movilización a la zona de trabajo |  | 1d | 2017-12-16 A | 2017-12-16 A | 21 | 100% |  | 2017-12-16 | 2017-12-16 | 1d |  |  |
| 24 | 1.3.2.2 | Reconocimiento de la zona de trabajo |  | 1d | 2017-12-17 A | 2017-12-17 A | 23 | 100% |  | 2017-12-17 | 2017-12-17 | 1d |  |  |
| 25 | 1.3.2.3 | Instalación de los puntos de control |  | 3d | 2017-12-18 A | 2017-12-20 A | 24 | 100% |  | 2017-12-18 | 2017-12-20 | 3d |  |  |
| 26 | 1.3.2.4 | Recopilación de información predial en Trujillo |  | 2d | 2017-12-21 A | 2017-12-22 A | 25 | 100% |  | 2017-12-21 | 2017-12-22 | 2d |  |  |
| 27 | 1.3.2.5 | Desmovilización |  | 1d | 2017-12-23 A | 2017-12-23 A | 26 | 100% |  | 2017-12-23 | 2017-12-23 | 1d |  |  |
| 28 | 1.3.2.6 | Procesamiento de información |  | 3d | 2017-12-24 A | 2017-12-26 A | 27 | 100% |  | 2017-12-24 | 2017-12-26 | 3d |  |  |

| ID | WBS | Task | Duration | Start | Finish | Predecessors | Complete | Remaining | Baseline start | Baseline finish | Baseline duration | Total slack | Free slack |
| --- | --- | --- | --- | --- | --- | --- | --- | --- | --- | --- | --- | --- | --- |
| 29 | 1.3.3 | **Labores de campo y gabinete (segundo entregable)** | 38d | 2017-12-27 A | 2018-02-02 |  | 82% | 6.84d | 2017-12-27 | 2018-02-02 | 38d | 161d |  |
| 30 | 1.3.3.1 | Movilización a la zona de trabajo | 1d | 2017-12-27 A | 2017-12-27 A | 28 | 100% |  | 2017-12-27 | 2017-12-27 | 1d |  |  |
| 31 | 1.3.3.2 | Convocatoria a los titulares de los predios | 4d | 2017-12-28 A | 2017-12-31 A | 30 | 100% |  | 2017-12-28 | 2017-12-31 | 4d |  |  |
| 32 | 1.3.3.3 | Linderación de predios | 15d | 2017-12-30 A | 2018-01-13 A | 31FS-2d | 100% |  | 2017-12-30 | 2018-01-13 | 15d |  |  |
| 33 | 1.3.3.4 | Inventario de existencias | 15d | 2017-12-30 A | 2018-01-13 A | 31FS-2d | 100% |  | 2017-12-30 | 2018-01-13 | 15d |  |  |
| 34 | 1.3.3.5 | Elaboración de planos y MD para Búsqueda Catastral | 11d | 2018-01-04 A | 2018-01-14 A | 33FS-10d | 100% |  | 2018-01-04 | 2018-01-14 | 11d |  |  |
| 35 | 1.3.3.6 | Presentación a SUNARP de búsqueda catastral | 1d | 2018-01-15 A | 2018-01-15 A | 34 | 100% |  | 2018-01-15 | 2018-01-15 | 1d |  |  |
| 36 | 1.3.3.7 | Elaboración de planos y MD para Anotaciones Preventivas | 10d | 2018-01-16 A | 2018-01-25 | 35 | 45% | 5.5d | 2018-01-16 | 2018-01-25 | 10d | 169d |  |
| 37 | 1.3.3.8 | Conformación exp a SUNARP para obtener las Anotaciones Preventivas de Derecho de Vía | 10d | 2018-01-20 A | 2018-01-29 | 35FS+4d | 20% | 8d | 2018-01-20 | 2018-01-29 | 10d | 165d |  |
| 38 | 1.3.3.9 | Informe del levantamiento físico | 3d | 2018-01-30 A | 2018-02-01 A | 37 | 100% |  | 2018-01-30 | 2018-02-01 | 3d |  |  |
| 39 | 1.3.3.10 | Informe de actividades | 3d | 2018-01-30 A | 2018-02-01 A | 37 | 100% |  | 2018-01-30 | 2018-02-01 | 3d |  |  |
| 40 | 1.3.3.11 | Gestión para la obtención de Certificado de Búsqueda Catastral | 1d | 2018-02-02 A | 2018-02-02 A | 39 | 100% |  | 2018-02-02 | 2018-02-02 | 1d |  |  |
| 41 | 1.3.3.12 | Entrega del segundo entregable | 1d | 2018-02-02 A | 2018-02-02 A | 39 | 100% |  | 2018-02-02 | 2018-02-02 | 1d |  |  |
| 42 | 1.3.4 | **Labores de seguimiento (tercer entregable)** | 32d | 2018-02-03 A | 2018-03-06 |  | 26% | 23.56d | 2018-02-03 | 2018-03-06 | 32d | 129d |  |
| 43 | 1.3.4.1 | Elaboración de plano clave | 1d | 2018-02-03 A | 2018-02-03 | 40 | 15% | 0.85d | 2018-02-03 | 2018-02-03 | 1d | 160d |  |
| 44 | 1.3.4.2 | Elaboración de plano de planta de los puntos de control | 1d | 2018-02-03 A | 2018-02-03 | 40 | 15% | 0.85d | 2018-02-03 | 2018-02-03 | 1d | 7.5d | 0d |
| 45 | 1.3.4.3 | Elaboración de planos y MD para expediente de tasación | 15d | 2018-02-04 A | 2018-02-18 | 44 | 50% | 7.5d | 2018-02-04 | 2018-02-18 | 15d | 0d |  |
| 46 | 1.3.4.4 | Elaboración de expedientes para tasación y remisión a Vivienda | 15d | 2018-02-09 A | 2018-02-23 | 45FS-10d | 50% | 7.5d | 2018-02-09 | 2018-02-23 | 15d | 140d |  |
| 47 | 1.3.4.5 | Clasificación de certificados de búsqueda catastral | 15d | 2018-02-09 | 2018-02-23 | 45FS-10d |  |  | 2018-02-09 | 2018-02-23 | 15d | 0d |  |
| 48 | 1.3.4.6 | Informe del análisis técnico legal de la búsqueda catastral | 5d | 2018-02-24 | 2018-02-28 | 47 |  |  | 2018-02-24 | 2018-02-28 | 5d | 0d |  |
| 49 | 1.3.4.7 | Inscripción de las Anotaciones Preventiva_1 | 3d | 2018-03-01 | 2018-03-03 | 48 |  |  | 2018-03-01 | 2018-03-03 | 3d | 0d |  |
| 50 | 1.3.4.8 | Informe general Análisis Técnico Legal de todos los predios | 3d | 2018-03-04 | 2018-03-06 | 49 |  |  | 2018-03-04 | 2018-03-06 | 3d | 0d |  |
| 51 | 1.3.5 | **Labores de seguimiento (cuarto entregable)** | 30d | 2018-03-07 | 2018-04-05 |  |  |  | 2018-03-07 | 2018-04-05 | 30d | 0d |  |
| 52 | 1.3.5.1 | Expedientes a SBN para transferencia de bienes del Estado | 10d | 2018-03-07 | 2018-03-16 | 50 |  |  | 2018-03-07 | 2018-03-16 | 10d | 119d |  |
| 53 | 1.3.5.2 | Oficios y Notificaciones; Sujeto Pasivo, ocupantes y poseedor | 10d | 2018-03-07 | 2018-03-16 | 50 |  |  | 2018-03-07 | 2018-03-16 | 10d | 119d |  |
| 54 | 1.3.5.3 | Inscripción de las Anotaciones Preventiva_2 | 2d | 2018-03-07 | 2018-03-08 | 50 |  |  | 2018-03-07 | 2018-03-08 | 2d | 127d |  |
| 55 | 1.3.5.4 | Plan de saneamiento; transferencia Interestatal | 12d | 2018-03-07 | 2018-03-18 | 50 |  |  | 2018-03-07 | 2018-03-18 | 12d | 116d | 0d |
| 56 | 1.3.5.5 | Solicitud de devolución de exp de tasación y remisión PROVIAS | 1d | 2018-03-19 | 2018-03-19 | 55 |  |  | 2018-03-19 | 2018-03-19 | 1d | 116d |  |
| 57 | 1.3.5.6 | Publicaciones para posesionarios | 30d | 2018-03-07 | 2018-04-05 | 50 |  |  | 2018-03-07 | 2018-04-05 | 30d | 99d |  |
| 58 | 1.3.5.7 | Publicaciones para Sujeto Pasivo | 30d | 2018-03-07 | 2018-04-05 | 50 |  |  | 2018-03-07 | 2018-04-05 | 30d | 0d |  |

| ID | WBS | Task | Duration | Start | Finish | Predecessors | Baseline start | Baseline finish | Baseline duration | Total slack |
| --- | --- | --- | --- | --- | --- | --- | --- | --- | --- | --- |
| 59 | 1.3.6 | **Labores de seguimiento (quinto, sexto y séptimo entregable)** | 88d | 2018-04-06 | 2018-07-02 |  | 2018-04-06 | 2018-07-02 | 88d | 0d |
| 60 | 1.3.6.1 | Informe del quinto entregable | 29d | 2018-04-06 | 2018-05-04 | 58 | 2018-04-06 | 2018-05-04 | 29d | 0d |
| 61 | 1.3.6.2 | Elaboración de exp de independización o inmatriculación | 10d | 2018-05-05 | 2018-05-14 | 60 | 2018-05-05 | 2018-05-14 | 10d | 60d |
| 62 | 1.3.6.3 | Informe de sexto entregable | 31d | 2018-05-05 | 2018-06-04 | 60 | 2018-05-05 | 2018-06-04 | 31d | 0d |
| 63 | 1.3.6.4 | Gestión de RM, RD, Formularios Registrales y contratos | 10d | 2018-06-05 | 2018-06-14 | 62 | 2018-06-05 | 2018-06-14 | 10d | 0d |
| 64 | 1.3.6.5 | Gestión de inscripción en SUNARP | 10d | 2018-06-15 | 2018-06-24 | 63 | 2018-06-15 | 2018-06-24 | 10d | 0d |
| 65 | 1.3.6.6 | Informe Final | 8d | 2018-06-25 | 2018-07-02 | 64 | 2018-06-25 | 2018-07-02 | 8d | 0d |
| 66 | 1.4 | **Cierre de Proyecto** | 11d | 2018-07-03 | 2018-07-13 |  | 2018-07-03 | 2018-07-13 | 11d | 0d |
| 67 | 1.4.1 | Control de calidad | 1d | 2018-07-03 | 2018-07-03 | 65 | 2018-07-03 | 2018-07-03 | 1d | 0d |
| 68 | 1.4.2 | Entrega al cliente | 1d | 2018-07-04 | 2018-07-04 | 67 | 2018-07-04 | 2018-07-04 | 1d | 9d |
| 69 | 1.4.3 | Cierre de Proyecto | 9d | 2018-07-05 | 2018-07-13 | 67FS+1d | 2018-07-05 | 2018-07-13 | 9d | 0d |
