# Los Calatos_Cronograma_Gestión Predial

Schedule from MS Project, 2017-10-16 to 2017-12-18, A marks actual dates.

## Calendars

- JPP: Mon-Sun 09:00-13:00, 15:00-19:00.

## Schedule

| ID | WBS | Task | Type | Duration | Start | Finish | Predecessors | Complete | Remaining | Total slack | Free slack |
| --- | --- | --- | --- | --- | --- | --- | --- | --- | --- | --- | --- |
| 1 | 1 | **Los Calatos Pipeline corridor** |  | 64d | 2017-10-16 A | 2017-12-18 |  | 48% | 33.14d |  |  |
| 2 | 1.1 | **Hitos** |  | 57d | 2017-10-16 A | 2017-12-11 |  |  | 57d | 7d |  |
| 3 | 1.1.1 | Aceptación de la propuesta | milestone | 0d | 2017-10-16 A | 2017-10-16 A |  | 100% |  |  |  |
| 4 | 1.1.2 | Fin de Identificación de Propietarios | milestone | 0d | 2017-11-19 | 2017-11-19 | 12 |  |  | 25d |  |
| 5 | 1.1.3 | Fin de Evaluación de estrategia | milestone | 0d | 2017-12-04 | 2017-12-04 | 13 |  |  | 10d |  |
| 6 | 1.1.4 | Fin de Calendario de Ejecución | milestone | 0d | 2017-12-11 | 2017-12-11 | 15 |  |  | 3d |  |
| 7 | 1.2 | **Inicio y Planificación** |  | 5d | 2017-10-16 A | 2017-10-20 A |  | 100% |  |  |  |
| 8 | 1.2.1 | Conformación y alineamiento de equipo |  | 3d | 2017-10-16 A | 2017-10-18 A | 3 | 100% |  |  |  |
| 9 | 1.2.2 | Elaboración del Plan de Ejecución |  | 2d | 2017-10-19 A | 2017-10-20 A | 8 | 100% |  |  |  |
| 10 | 1.2.3 | Aprobación del Plan de Ejecución | milestone | 0d | 2017-10-20 A | 2017-10-20 A | 9 | 100% |  |  |  |
| 11 | 1.3 | **Ejecución y Monitoreo** |  | 53d | 2017-10-21 A | 2017-12-12 | 7 | 49% | 27.19d | 0d |  |
| 12 | 1.3.1 | Identificación de propietarios |  | 30d | 2017-10-21 A | 2017-11-19 |  | 90% | 3d | 3.15d | 0d |
| 13 | 1.3.2 | Evaluación de Estrategia para adquisición de predios |  | 15d | 2017-11-20 A | 2017-12-04 | 12 | 30% | 10.5d | 0.15d | 0d |
| 14 | 1.3.3 | Estimación del Valor de las Tierras |  | 12d | 2017-11-20 | 2017-12-01 | 12 |  |  | 3.15d | 3d |
| 15 | 1.3.4 | Elaboración del calendario de ejecución |  | 7d | 2017-12-05 | 2017-12-11 | 14, 13 |  |  | 0.15d | 0d |
| 16 | 1.3.5 | Elaboración de informe final del servicio |  | 1d | 2017-12-12 A | 2017-12-12 | 15 | 15% | 0.85d | 0d |  |
| 17 | 1.4 | **Cierre de Proyecto** |  | 6d | 2017-12-13 | 2017-12-18 | 11 |  |  | 0d |  |
| 18 | 1.4.1 | Informe de gestión proyecto |  | 4d | 2017-12-13 | 2017-12-16 | 16 |  |  | 0d |  |
| 19 | 1.4.2 | Fin de proyecto |  | 2d | 2017-12-17 | 2017-12-18 | 18 |  |  | 0d |  |
