# Proyecto Alicia

Schedule from MS Project, 2017-04-27 to 2017-06-30, status date 2017-05-08, A marks actual dates.
Microsoft

## Calendars

- Calendario JPP1: Mon-Sat 09:00-13:00, 15:00-19:00; Sun off. Exceptions (off unless hours are given): 2017-05-01 (DIA DEL TRABAJO).

## Schedule

| ID | WBS | Task | Type | Duration | Start | Finish | Predecessors | Complete | Remaining | Total slack | Free slack | Constraint |
| --- | --- | --- | --- | --- | --- | --- | --- | --- | --- | --- | --- | --- |
| 1 | 1 | **Proyecto: IBEREOLICA - Diagnóstico de Derechos CARAVELI** |  | 55d | 2017-04-27 A | 2017-06-30 |  | 12% | 48.28d | 0d |  |  |
| 2 | 1.1 | **Hitos** |  | 52d | 2017-04-27 A | 2017-06-27 |  |  | 52d | 3d |  |  |
| 3 | 1.1.1 | Aceptación de la propuesta | milestone | 0d | 2017-04-27 A | 2017-04-27 A | 8SS | 100% |  |  |  |  |
| 4 | 1.1.2 | Informe de proceso de adquisición | milestone | 0d | 2017-06-05 | 2017-06-05 | 17 |  |  | 22d |  |  |
| 5 | 1.1.3 | Entrega de informe de diagnóstico de derechos | milestone | 0d | 2017-06-27 | 2017-06-27 | 24 |  |  | 3d |  |  |
| 6 | 1.2 | **Inicio y Planificación** |  | 4d | 2017-04-27 A | 2017-05-02 A |  | 100% |  |  |  |  |
| 7 | 1.2.1 | Conformación y alineamiento del equipo de trabajo |  | 1d | 2017-04-27 A | 2017-04-27 A |  | 100% |  |  |  |  |
| 8 | 1.2.2 | Revisión de información antecedente |  | 4d | 2017-04-27 A | 2017-05-02 A | 7SS | 100% |  |  |  |  |
| 9 | 1.2.3 | Reunión de inicio |  | 1d | 2017-05-02 A | 2017-05-02 A | 8FS-1d | 100% |  |  |  |  |
| 10 | 1.3 | **Ejecución y Monitoreo** |  | 43d | 2017-05-02 A | 2017-06-20 |  | 9% | 39.29d | 9d |  |  |
| 11 | 1.3.1 | **Diagnóstico de Derechos** |  | 15d | 2017-05-09 | 2017-05-25 |  |  |  | 31d |  |  |
| 12 | 1.3.1.1 | Movilización a las zonas registrales 1 |  | 3d | 2017-05-09 | 2017-05-11 | 9FS+4d |  |  | 31d | 0d | finish no earlier than 2017-05-11 |
| 13 | 1.3.1.2 | Movilización a las zonas registrales 2 |  | 5d | 2017-05-20 | 2017-05-25 | 12FS+7d |  |  | 31d |  |  |
| 14 | 1.3.2 | **Desarrollo del Diagnóstico** |  | 43d | 2017-05-02 A | 2017-06-20 |  | 9% | 39.02d | 9d |  |  |
| 15 | 1.3.2.1 | Gestión de consultas en entidades públicas(RRPP/Otras instituciones) |  | 25d | 2017-05-02 A | 2017-05-30 | 9SS | 20% | 20d | 22d | 0d |  |
| 16 | 1.3.2.2 | Presentación diagnóstico preliminar |  | 1d | 2017-05-22 | 2017-05-22 |  |  |  | 34d |  | start no earlier than 2017-05-22 |
| 17 | 1.3.2.3 | Elaboración del informe del proceso de adquisición |  | 5d | 2017-05-31 | 2017-06-05 | 15 |  |  | 22d | 0d |  |
| 18 | 1.3.2.4 | Evaluación y análisis de información obtenida |  | 27d | 2017-05-16 | 2017-06-15 | 15SS+12d |  |  | 0d |  |  |
| 19 | 1.3.2.5 | Elaboración del informe de diagnóstico |  | 5d | 2017-06-15 | 2017-06-20 | 18FS-1d |  |  | 0d |  |  |
| 20 | 1.3.2.6 | Composición del mosaico cartográfico |  | 43d | 2017-05-02 A | 2017-06-20 | 15SS | 12% | 38d | 9d |  |  |
| 21 | 1.3.2.7 | Verificación en campo |  | 2d | 2017-05-10 | 2017-05-11 | 9FS+6d |  |  | 43d |  |  |
| 22 | 1.4 | **Cierre del Proyecto** |  | 9d | 2017-06-21 | 2017-06-30 |  |  |  | 0d |  |  |
| 23 | 1.4.1 | Control de calidad |  | 5d | 2017-06-21 | 2017-06-26 | 19 |  |  | 0d |  |  |
| 24 | 1.4.2 | Entrega del informe de diagnóstico de derechos |  | 1d | 2017-06-27 | 2017-06-27 | 23 |  |  | 0d |  |  |
| 25 | 1.4.3 | Acta de cierre |  | 3d | 2017-06-28 | 2017-06-30 | 24 |  |  | 0d |  |  |
