# DNCD Eddy

Schedule from MS Project, 2017-11-07 to 2017-11-22, A marks actual dates.

## Calendars

- Estándar: Mon-Fri 09:00-13:00, 15:00-19:00; Sat-Sun off. Exceptions (off unless hours are given): 2017-11-11 to 2017-12-31 09:00-13:00, 15:00-19:00 (Laborable, recurring).

## Schedule

| ID | WBS | Task | Type | Duration | Start | Finish | Predecessors | Complete | Remaining | Total slack | Free slack |
| --- | --- | --- | --- | --- | --- | --- | --- | --- | --- | --- | --- |
| 1 | 1 | **Diagnóstico de Servidumbre - Oxapampa** |  | 16d | 2017-11-07 A | 2017-11-22 |  | 14% | 13.81d |  |  |
| 2 | 1.1 | **Hitos** |  | 16d | 2017-11-07 | 2017-11-22 |  |  |  |  |  |
| 3 | 1.1.1 | Obtención de Información Catastral | milestone | 0d | 2017-11-15 | 2017-11-15 | 8 |  |  | 7d |  |
| 4 | 1.1.2 | Entrega de Informe Final | milestone | 0d | 2017-11-21 | 2017-11-21 | 14 |  |  | 1d |  |
| 5 | 1.2 | **Inicio y Planificación** |  | 1d | 2017-11-07 A | 2017-11-07 A |  | 100% |  |  |  |
| 6 | 1.2.1 | Conformación de equipo |  | 1d | 2017-11-07 A | 2017-11-07 A |  | 100% |  |  |  |
| 7 | 1.3 | **Ejecución y monitoreo** |  | 15d | 2017-11-08 A | 2017-11-22 |  | 11% | 13.4d |  |  |
| 8 | 1.3.1 | Obtención de Información Catastral - MINAGRI |  | 8d | 2017-11-08 A | 2017-11-15 | 6 | 20% | 6.4d | 7d | 0d |
| 9 | 1.3.2 | Procesamiento de Información |  | 2d | 2017-11-15 | 2017-11-16 | 8SS+7d |  |  | 0d |  |
| 10 | 1.3.3 | Análisis de Información |  | 2d | 2017-11-17 | 2017-11-18 | 9 |  |  | 0d |  |
| 11 | 1.3.4 | Elaboración de Informe |  | 3d | 2017-11-18 | 2017-11-20 | 10SS+1d |  |  | 0d |  |
| 12 | 1.4 | **Cierre** |  | 2d | 2017-11-21 | 2017-11-22 |  |  |  | 0d |  |
| 13 | 1.4.1 | Control de calidad |  | 1d | 2017-11-21 | 2017-11-21 | 11 |  |  | 1d |  |
| 14 | 1.4.2 | Entrega de informe y expedientes |  | 1d | 2017-11-21 | 2017-11-21 | 11 |  |  | 0d |  |
| 15 | 1.4.3 | Acta de cierre |  | 1d | 2017-11-22 | 2017-11-22 | 14 |  |  | 0d |  |
