# Acar_Sane_Cronograma_v1

Schedule from MS Project, 2018-05-17 to 2019-05-22.
Microsoft

## Calendars

- JPP: Mon-Fri 08:00-13:00, 14:00-17:00; Sat-Sun off.

## Schedule

| ID | WBS | Task | Type | Duration | Start | Finish | Predecessors | Total slack | Free slack |
| --- | --- | --- | --- | --- | --- | --- | --- | --- | --- |
| 1 | 1 | **Proyecto: Servicio de Saneamiento Corporación Aceros Arequipa** |  | 265d | 2018-05-17 | 2019-05-22 |  | 0d |  |
| 2 | 1.1 | **Hitos** |  | 265d | 2018-05-17 | 2019-05-22 |  | 0d |  |
| 3 | 1.1.1 | Firma de contrato | milestone | 0d | 2018-05-17 | 2018-05-17 |  | 0d |  |
| 4 | 1.1.2 | Levantamiento topográfico | milestone | 0d | 2018-06-01 | 2018-06-01 | 23 | 253d |  |
| 5 | 1.1.3 | E1: Acumulación 5, 6 y 7 SUNARP | milestone | 0d | 2018-07-11 | 2018-07-11 | 26 | 225d |  |
| 6 | 1.1.4 | E2: Habilitación urbana del lote acumulado | milestone | 0d | 2018-09-24 | 2018-09-24 | 30 | 172d |  |
| 7 | 1.1.5 | E3: Regularización de las edificaciones del lote acumulado | milestone | 0d | 2018-11-07 | 2018-11-07 | 34 | 140d |  |
| 8 | 1.1.6 | E4: Independización del lote E con fines de acumulación al L4 | milestone | 0d | 2018-09-24 | 2018-09-24 | 38 | 172d |  |
| 9 | 1.1.7 | E5: Recepción con modificación de la habilitación urbana L4 | milestone | 0d | 2019-01-22 | 2019-01-22 | 43 | 86d |  |
| 10 | 1.1.8 | E6: Regularización de la fabrica L4 | milestone | 0d | 2019-05-22 | 2019-05-22 | 47 | 0d |  |
| 11 | 1.1.9 | E7: Regularización de la habilitación urbana L3 | milestone | 0d | 2018-08-10 | 2018-08-10 | 51 | 203d |  |
| 12 | 1.1.10 | E8:Regularización de la edificación e inscripción | milestone | 0d | 2019-01-09 | 2019-01-09 | 55 | 95d |  |
| 13 | 1.1.11 | E9: Informe de revisión del cálculo del impuesto predial | milestone | 0d | 2018-07-18 | 2018-07-18 | 57 | 220d |  |
| 14 | 1.1.12 | E10: Informe final | milestone | 0d | 2019-05-22 | 2019-05-22 | 60 | 0d |  |
| 15 | 1.2 | **Inicio y Planificación** |  | 3d | 2018-05-21 | 2018-05-23 |  | 0d |  |
| 16 | 1.2.1 | Conformación del equipo de trabajo |  | 1d | 2018-05-21 | 2018-05-21 | 3FS+2d | 0d |  |
| 17 | 1.2.2 | Gestión de logística del proyecto |  | 1d | 2018-05-21 | 2018-05-21 | 16SS | 0d |  |
| 18 | 1.2.3 | Elaboración del plan de trabajo |  | 1d | 2018-05-22 | 2018-05-22 | 17 | 0d |  |
| 19 | 1.2.4 | Inducción al personal de trabajo |  | 1d | 2018-05-23 | 2018-05-23 | 18 | 0d |  |
| 20 | 1.3 | **Ejecución - Seguimiento y Control** |  | 260d | 2018-05-24 | 2019-05-22 |  | 0d |  |
| 21 | 1.3.1 | Inducción de ACAR |  | 1d | 2018-05-24 | 2018-05-24 | 19 | 0d |  |
| 22 | 1.3.2 | **Levantamiento topográfico** |  | 10d | 2018-05-24 | 2018-06-06 |  | 0d |  |
| 23 | 1.3.2.1 | Levantamiento de edificaciones y obras complementarias de los almacenes 4, 5 y 6 |  | 7d | 2018-05-24 | 2018-06-01 | 21SS | 0d |  |
| 24 | 1.3.2.2 | Elaboración de los planos de distribución |  | 3d | 2018-06-04 | 2018-06-06 | 23 | 220d | 0d |

| ID | WBS | Task | Duration | Start | Finish | Predecessors | Total slack | Free slack |
| --- | --- | --- | --- | --- | --- | --- | --- | --- |
| 25 | 1.3.3 | **Acumulación 5, 6 y 7 SUNARP** | 33d | 2018-05-28 | 2018-07-11 |  | 140d |  |
| 26 | 1.3.3.1 | Elaboración de expediente | 33d | 2018-05-28 | 2018-07-11 | 23SS+2d | 140d | 0d |
| 27 | 1.3.4 | **Recepción de obra - habilitación urbana** | 54d | 2018-07-11 | 2018-09-24 |  | 140d |  |
| 28 | 1.3.4.1 | Elaboración de expediente | 54d | 2018-07-11 | 2018-09-24 | 26FS-1d | 140d | 0d |
| 29 | 1.3.4.2 | Trámite en la municipalidad | 54d | 2018-07-11 | 2018-09-24 | 28SS | 172d |  |
| 30 | 1.3.4.3 | Trámite en SUNARP | 54d | 2018-07-11 | 2018-09-24 | 28SS | 140d | 0d |
| 31 | 1.3.5 | **Regularización de las edificaciones del lote acumulado** | 33d | 2018-09-24 | 2018-11-07 |  | 140d |  |
| 32 | 1.3.5.1 | Elaboración de expediente | 33d | 2018-09-24 | 2018-11-07 | 30FS-1d | 140d | 0d |
| 33 | 1.3.5.2 | Trámite en la municipalidad | 33d | 2018-09-24 | 2018-11-07 | 32SS | 140d |  |
| 34 | 1.3.5.3 | Trámite en SUNARP | 33d | 2018-09-24 | 2018-11-07 | 32SS | 140d | 0d |
| 35 | 1.3.6 | **Independización del lote E con fines de acumulación al L4** | 86d | 2018-05-28 | 2018-09-24 |  | 0d |  |
| 36 | 1.3.6.1 | Elaboración de expediente | 86d | 2018-05-28 | 2018-09-24 | 23SS+2d | 0d |  |
| 37 | 1.3.6.2 | Trámite en la municipalidad | 86d | 2018-05-28 | 2018-09-24 | 36SS | 172d |  |
| 38 | 1.3.6.3 | Trámite en SUNARP | 86d | 2018-05-28 | 2018-09-24 | 36SS | 0d |  |
| 39 | 1.3.7 | **Recepción con modificación de la habilitación urbana L4** | 86d | 2018-09-25 | 2019-01-22 |  | 0d |  |
| 40 | 1.3.7.1 | Elaboración de expediente | 86d | 2018-09-25 | 2019-01-22 | 38 | 0d |  |
| 41 | 1.3.7.2 | Trámite en la municipalidad | 86d | 2018-09-25 | 2019-01-22 | 40SS | 86d |  |
| 42 | 1.3.7.3 | Trámite en SUNARP | 86d | 2018-09-25 | 2019-01-22 | 40SS | 86d |  |
| 43 | 1.3.7.4 | Acumulación | 86d | 2018-09-25 | 2019-01-22 | 40SS | 0d |  |
| 44 | 1.3.8 | **Regularización de la fabrica L4** | 86d | 2019-01-23 | 2019-05-22 |  | 0d |  |
| 45 | 1.3.8.1 | Elaboración de expediente | 86d | 2019-01-23 | 2019-05-22 | 43 | 0d |  |
| 46 | 1.3.8.2 | Trámite en la municipalidad | 86d | 2019-01-23 | 2019-05-22 | 45SS | 0d |  |
| 47 | 1.3.8.3 | Trámite en SUNARP | 86d | 2019-01-23 | 2019-05-22 | 45SS | 0d |  |
| 48 | 1.3.9 | **Regularización de la habilitación urbana L3** | 55d | 2018-05-28 | 2018-08-10 |  | 95d |  |
| 49 | 1.3.9.1 | Elaboración de expediente | 55d | 2018-05-28 | 2018-08-10 | 23SS+2d | 95d | 0d |
| 50 | 1.3.9.2 | Trámite en la municipalidad | 55d | 2018-05-28 | 2018-08-10 | 49SS | 203d |  |
| 51 | 1.3.9.3 | Trámite en SUNARP | 55d | 2018-05-28 | 2018-08-10 | 49SS | 95d | 0d |

| ID | WBS | Task | Duration | Start | Finish | Predecessors | Total slack | Free slack |
| --- | --- | --- | --- | --- | --- | --- | --- | --- |
| 52 | 1.3.10 | **Regularización de la edificación e inscripción** | 86d | 2018-09-12 | 2019-01-09 |  | 95d |  |
| 53 | 1.3.10.1 | Elaboración de expediente | 86d | 2018-09-12 | 2019-01-09 | 51FS+22d | 95d | 0d |
| 54 | 1.3.10.2 | Trámite en la municipalidad | 86d | 2018-09-12 | 2019-01-09 | 53SS | 95d |  |
| 55 | 1.3.10.3 | Trámite en SUNARP | 86d | 2018-09-12 | 2019-01-09 | 53SS | 95d | 0d |
| 56 | 1.3.11 | **Informe de revisión del cálculo del impuesto predial** | 33d | 2018-06-04 | 2018-07-18 |  | 220d |  |
| 57 | 1.3.11.1 | Informe de impuesto predial | 33d | 2018-06-04 | 2018-07-18 | 24SS | 220d | 0d |
| 58 | 1.4 | **Cierre del Proyecto** | 10d | 2019-05-09 | 2019-05-22 |  | 0d |  |
| 59 | 1.4.1 | Elaboración del informe final | 10d | 2019-05-09 | 2019-05-22 | 45FS-10d | 0d |  |
| 60 | 1.4.2 | Entrega de documentación generada del proyecto | 1d | 2019-05-22 | 2019-05-22 | 59FF | 0d |  |
