# C&V_Diag_Cronograma_v1

Schedule from MS Project, 2018-05-18 to 2018-06-21.
Microsoft

## Calendars

- JPP-CYV: Mon-Fri 09:00-13:00, 14:00-18:00; Sat-Sun off.

## Schedule

| ID | WBS | Task | Type | Duration | Start | Finish | Predecessors | Total slack |
| --- | --- | --- | --- | --- | --- | --- | --- | --- |
| 1 | 1 | **Proyecto: Compatibilidad Urbana Chilca** |  | 25d | 2018-05-18 | 2018-06-21 |  | 0d |
| 2 | 1.1 | **Hitos** |  | 24d | 2018-05-18 | 2018-06-21 |  | 0d |
| 3 | 1.1.1 | Firma de contrato | milestone | 0d | 2018-05-18 | 2018-05-18 | 10 | 24d |
| 4 | 1.1.2 | E1: Levantamiento topográfico | milestone | 0d | 2018-05-25 | 2018-05-25 | 15 | 19d |
| 5 | 1.1.3 | E2: Búsqueda catastral | milestone | 0d | 2018-06-15 | 2018-06-15 | 16 | 4d |
| 6 | 1.1.4 | E3: Certificado de zonificación y vías | milestone | 0d | 2018-06-15 | 2018-06-15 | 17 | 4d |
| 7 | 1.1.5 | E4: Informe de compatibilidad urbana | milestone | 0d | 2018-06-21 | 2018-06-21 | 18 | 0d |
| 8 | 1.1.6 | E5: Informe final | milestone | 0d | 2018-06-21 | 2018-06-21 | 21 | 0d |
| 9 | 1.2 | **Inicio y Planificación** |  | 2d | 2018-05-18 | 2018-05-21 |  | 0d |
| 10 | 1.2.1 | Firma de contrato |  | 1d | 2018-05-18 | 2018-05-18 |  | 0d |
| 11 | 1.2.2 | Conformación del equipo de trabajo |  | 1d | 2018-05-18 | 2018-05-18 | 10SS | 0d |
| 12 | 1.2.3 | Inducción al personal de trabajo |  | 1d | 2018-05-21 | 2018-05-21 | 11 | 0d |
| 13 | 1.3 | **Ejecución - Seguimiento y Control** |  | 24d | 2018-05-21 | 2018-06-21 |  | 0d |
| 14 | 1.3.1 | **Compatibilidad Urbana Chilca** |  | 24d | 2018-05-21 | 2018-06-21 |  | 0d |
| 15 | 1.3.1.1 | Levantamiento topográfico |  | 5d | 2018-05-21 | 2018-05-25 | 12SS | 0d |
| 16 | 1.3.1.2 | Trámite en SUNARP |  | 15d | 2018-05-28 | 2018-06-15 | 15 | 0d |
| 17 | 1.3.1.3 | Trámite del certificado de zonificación y vías |  | 15d | 2018-05-28 | 2018-06-15 | 16SS | 0d |
| 18 | 1.3.1.4 | Elaboración del informe de compatibilidad urbana |  | 4d | 2018-06-18 | 2018-06-21 | 17 | 0d |
| 19 | 1.3.2 | **Cierre del Proyecto** |  | 4d | 2018-06-18 | 2018-06-21 |  | 0d |
| 20 | 1.3.2.1 | Elaboración del informe final |  | 4d | 2018-06-18 | 2018-06-21 | 18SS | 0d |
| 21 | 1.3.2.2 | Entrega de documentación generada del proyecto |  | 1d | 2018-06-21 | 2018-06-21 | 20FF | 0d |
