# C&V_Diagnóstico_v0_080118_

Schedule from MS Project, 2018-01-03 to 2018-03-05.

## Calendars

- Estándar: Mon-Fri 09:00-13:00, 15:00-19:00; Sat-Sun off. Exceptions (off unless hours are given): 2018-01-05 to 2018-03-28 09:00-13:00, 15:00-19:00.

## Schedule

| ID | WBS | Task | Type | Duration | Start | Finish | Predecessors | Total slack | Free slack |
| --- | --- | --- | --- | --- | --- | --- | --- | --- | --- |
| 1 | 1 | Identificación de Sites Arequipa, Tacna, Moquegua e Ica |  | 62d | 2018-01-03 | 2018-03-05 |  | 0d |  |
| 2 | 2 | **Hitos** |  | 58d | 2018-01-03 | 2018-03-01 |  | 0d |  |
| 3 | 2.1 | Aceptación de la propuesta | milestone | 0d | 2018-01-03 | 2018-01-03 |  | 0d |  |
| 4 | 2.2 | Entrega de informe final | milestone | 0d | 2018-03-01 | 2018-03-01 | 21 | 4d |  |
| 5 | 3 | **Inicio y Planificación** |  | 6d | 2018-01-03 | 2018-01-08 |  | 0d |  |
| 6 | 3.1 | Conformación y alineamiento de equipo |  | 3d | 2018-01-03 | 2018-01-05 | 3 | 0d |  |
| 7 | 3.2 | Elaboración del plan de Ejecución |  | 3d | 2018-01-06 | 2018-01-08 | 6 | 0d |  |
| 8 | 3.3 | Aprobación del Plan de Ejecución | milestone | 0d | 2018-01-08 | 2018-01-08 | 7 | 0d |  |
| 9 | 4 | **Ejecución y Monitoreo** |  | 52d | 2018-01-09 | 2018-03-01 | 5 | 0d |  |
| 10 | 4.1 | Recopilación de información cartográfica |  | 3d | 2018-01-09 | 2018-01-11 |  | 0d |  |
| 11 | 4.2 | Definición de áreas probables |  | 5d | 2018-01-12 | 2018-01-16 | 10 | 0d |  |
| 12 | 4.3 | Recopilación de información de propiedad |  | 25d | 2018-01-12 | 2018-02-05 | 11SS | 0d |  |
| 13 | 4.4 | Inspección de campo, sin medición |  | 10d | 2018-01-12 | 2018-01-21 | 12SS | 6d | 0d |
| 14 | 4.5 | Elaboración de plano mosaico de propiedad |  | 15d | 2018-01-22 | 2018-02-05 | 13 | 6d | 5d |
| 15 | 4.6 | Informe de diagnóstico de propiedad |  | 7d | 2018-02-06 | 2018-02-12 | 14FS-5d, 12 | 0d |  |
| 16 | 4.7 | Determinación final de alternativas de sites |  | 5d | 2018-02-13 | 2018-02-17 | 15 | 0d |  |
| 17 | 4.8 | Estrategia para el uso superficial |  | 5d | 2018-02-18 | 2018-02-22 | 16 | 0d |  |
| 18 | 4.9 | Informe final - site Arequipa |  | 12d | 2018-01-17 | 2018-01-28 | 11 | 31d | 0d |
| 19 | 4.10 | Informe final del servicio |  | 4d | 2018-02-23 | 2018-02-26 | 17 | 0d |  |
| 20 | 4.11 | Control de calidad y entrega de informe - site Arequipa |  | 5d | 2018-01-29 | 2018-02-02 | 18 | 31d |  |
| 21 | 4.12 | Control de calidad |  | 3d | 2018-02-27 | 2018-03-01 | 19 | 0d |  |
| 22 | 5 | **Cierre de Proyecto** |  | 4d | 2018-03-02 | 2018-03-05 |  | 0d |  |
| 23 | 5.1 | Entrega Informe Final |  | 1d | 2018-03-02 | 2018-03-02 | 21 | 0d |  |
| 24 | 5.2 | Cierre |  | 3d | 2018-03-03 | 2018-03-05 | 23 | 0d |  |
