# 20160418_HLA

Schedule from MS Project, 2017-08-03 to 2017-08-10, A marks actual dates.

## Calendars

- JPP: Mon-Sun 09:00-13:00, 15:00-19:00.

## Schedule

| ID | WBS | Task | Type | Duration | Start | Finish | Complete | Remaining | Baseline start | Baseline finish | Baseline duration | Total slack | Constraint |
| --- | --- | --- | --- | --- | --- | --- | --- | --- | --- | --- | --- | --- | --- |
| 1 | 1 | **Diagnóstico de Propiedades** |  | 8d | 2017-08-03 A | 2017-08-10 | 78% | 1.78d | 2016-04-12 | 2016-10-31 | 202d |  |  |
| 2 | 1.1 | Inicio y Planificación |  | 1d | 2017-08-03 A | 2017-08-03 A | 100% |  | 2016-04-12 | 2016-04-17 | 6d |  | finish no earlier than 2017-08-03 |
| 3 | 1.2 | **Ejecución y Monitoreo** |  | 7d | 2017-08-04 A | 2017-08-10 | 71% | 2d | 2016-04-18 | 2016-10-26 | 191d |  |  |
| 4 | 1.2.1 | **Diagnóstico de derechos** |  | 7d | 2017-08-04 A | 2017-08-10 | 71% | 2d |  |  |  |  |  |
| 5 | 1.2.1.1 | Revisión del alcance del servicio |  | 1d | 2017-08-04 A | 2017-08-04 A | 100% |  |  |  |  |  | finish no earlier than 2017-08-04 |
| 6 | 1.2.1.2 | Revisión y análisis de casos similares/lecciones |  | 1d | 2017-08-04 A | 2017-08-04 A | 100% |  |  |  |  |  |  |
| 7 | 1.2.1.3 | Recopilación de información de SUNARP y otros |  | 3d | 2017-08-05 A | 2017-08-07 | 33% | 2d |  |  |  | 3d | finish no earlier than 2017-08-07 |
| 8 | 1.2.1.4 | Análisis de información integral obtenida y conformación de base cartográfica |  | 1d | 2017-08-07 A | 2017-08-07 A | 100% |  |  |  |  |  | finish no earlier than 2017-08-07 |
| 9 | 1.2.1.5 | Elaboración de informe final y dossier de planos temáticos | milestone | 0d | 2017-08-08 A | 2017-08-08 A | 100% |  |  |  |  |  |  |
| 10 | 1.2.1.6 | Control de calidad |  | 1d | 2017-08-09 A | 2017-08-09 A | 100% |  |  |  |  |  | finish no earlier than 2017-08-09 |
| 11 | 1.2.1.7 | Entrega al cliente | milestone | 0d | 2017-08-10 A | 2017-08-10 A | 100% |  |  |  |  |  | start no earlier than 2017-08-14 |
| 12 | 1.3 | Cierre de Proyecto |  | 1d | 2017-08-10 A | 2017-08-10 A | 100% |  | 2016-10-27 | 2016-10-31 | 5d |  | start no earlier than 2017-08-15 |
