# Cronograma_Due Diligence_Proyecto Michiquillay

Schedule from MS Project, 2017-09-13 to 2017-09-30, A marks actual dates.
Microsoft

## Calendars

- DD_Proyecto Michiquillay: Mon-Sat 09:00-13:00, 14:00-18:00; Sun off.

## Schedule

| ID | WBS | Task | Type | Duration | Start | Finish | Predecessors | Complete | Constraint |
| --- | --- | --- | --- | --- | --- | --- | --- | --- | --- |
| 1 | 1 | **Diagnóstico Gráfico_Proyecto Minero Michiquillay** |  | 16d | 2017-09-13 A | 2017-09-30 A |  | 100% |  |
| 2 | 1.1 | **Hitos** |  | 10d | 2017-09-13 A | 2017-09-25 A |  | 100% |  |
| 3 | 1.1.1 | Aceptación de propuesta | milestone | 0d | 2017-09-13 A | 2017-09-13 A |  | 100% |  |
| 4 | 1.1.2 | Entrega de PPT, kmz y planos temáticos | milestone | 0d | 2017-09-25 A | 2017-09-25 A |  | 100% |  |
| 5 | 1.2 | **Inicio y Planificación** |  | 1d | 2017-09-13 A | 2017-09-13 A |  | 100% |  |
| 6 | 1.2.1 | Conformación y alineamiento de equipo |  | 1d | 2017-09-13 A | 2017-09-13 A |  | 100% |  |
| 7 | 1.3 | **Ejecución y Monitoreo** |  | 16d | 2017-09-13 A | 2017-09-30 A |  | 100% |  |
| 8 | 1.3.1 | **Diagnóstico en gabinete** |  | 10d | 2017-09-13 A | 2017-09-23 A |  | 100% |  |
| 9 | 1.3.1.1 | Recopilación de información |  | 5d | 2017-09-13 A | 2017-09-18 A | 6 | 100% |  |
| 10 | 1.3.1.2 | Elaboración de PPT |  | 6d | 2017-09-18 A | 2017-09-23 A | 9 | 100% |  |
| 11 | 1.3.1.3 | Elaboración de planos temáticos |  | 6d | 2017-09-18 A | 2017-09-23 A | 9 | 100% |  |
| 12 | 1.3.1.4 | Elaboración de kmz |  | 6d | 2017-09-18 A | 2017-09-23 A | 9 | 100% |  |
| 13 | 1.3.2 | **Cierre de proyecto** |  | 6d | 2017-09-25 A | 2017-09-30 A |  | 100% |  |
| 14 | 1.3.2.1 | Control de calidad |  | 4d | 2017-09-25 A | 2017-09-28 A | 12 | 100% | start no earlier than 2017-09-22 |
| 15 | 1.3.2.2 | Entrega de informe (ppt, kmz y planos) |  | 1d | 2017-09-29 A | 2017-09-29 A | 14 | 100% | start no earlier than 2017-09-23 |
| 16 | 1.3.2.3 | Cierre de proyecto |  | 1d | 2017-09-30 A | 2017-09-30 A | 15 | 100% |  |
