# FEPO_Imp-Pre_Cronograma_v1

Schedule from MS Project, 2018-04-24 to 2018-05-21.
Microsoft

## Calendars

- JPP-FEPO: Mon-Fri 09:00-13:00, 14:00-18:00; Sat-Sun off.

## Schedule

| ID | WBS | Task | Type | Duration | Start | Finish | Predecessors | Total slack |
| --- | --- | --- | --- | --- | --- | --- | --- | --- |
| 1 | 1 | **Proyecto: Central Termoeléctrica Chilca** |  | 20d | 2018-04-24 | 2018-05-21 |  | 0d |
| 2 | 1.1 | **Hitos** |  | 19d | 2018-04-24 | 2018-05-21 |  | 0d |
| 3 | 1.1.1 | Firma de contrato | milestone | 0d | 2018-04-24 | 2018-04-24 | 9 | 19d |
| 4 | 1.1.2 | E1: Levantamiento topográfico | milestone | 0d | 2018-05-04 | 2018-05-04 | 14 | 11d |
| 5 | 1.1.3 | E2: Entrega de informe | milestone | 0d | 2018-05-15 | 2018-05-15 | 15 | 4d |
| 6 | 1.1.4 | E3: Entrega al cliente | milestone | 0d | 2018-05-18 | 2018-05-18 | 16 | 1d |
| 7 | 1.1.5 | E4: Informe final | milestone | 0d | 2018-05-21 | 2018-05-21 | 19 | 0d |
| 8 | 1.2 | **Inicio y Planificación** |  | 2d | 2018-04-24 | 2018-04-25 |  | 0d |
| 9 | 1.2.1 | Firma de contrato |  | 1d | 2018-04-24 | 2018-04-24 |  | 0d |
| 10 | 1.2.2 | Conformación del equipo de trabajo |  | 1d | 2018-04-24 | 2018-04-24 | 9SS | 0d |
| 11 | 1.2.3 | Inducción al personal de trabajo |  | 1d | 2018-04-25 | 2018-04-25 | 10 | 0d |
| 12 | 1.3 | **Ejecución - Seguimiento y Control** |  | 19d | 2018-04-25 | 2018-05-21 |  | 0d |
| 13 | 1.3.1 | **Cálculo del Impuesto Predial** |  | 18d | 2018-04-25 | 2018-05-18 |  | 0d |
| 14 | 1.3.1.1 | Levantamiento topográfico |  | 8d | 2018-04-25 | 2018-05-04 | 11SS | 0d |
| 15 | 1.3.1.2 | Elaboración del informe de impuesto predial |  | 7d | 2018-05-07 | 2018-05-15 | 14 | 0d |
| 16 | 1.3.1.3 | Entrega de información al cliente para revisión |  | 3d | 2018-05-16 | 2018-05-18 | 15 | 0d |
| 17 | 1.3.2 | **Cierre del Proyecto** |  | 2d | 2018-05-18 | 2018-05-21 |  | 0d |
| 18 | 1.3.2.1 | Elaboración del informe final |  | 2d | 2018-05-18 | 2018-05-21 | 16SS+2d | 0d |
| 19 | 1.3.2.2 | Entrega de documentación generada del proyecto |  | 1d | 2018-05-21 | 2018-05-21 | 18FF | 0d |
