# Gantt_Trujillo-Chicama TC01_V2

Schedule from MS Project, 2017-10-03 to 2018-05-04, A marks actual dates.

## Calendars

- Todos los días: Mon-Sun 09:00-13:00, 15:00-19:00.

## Schedule

| ID | WBS | Task | Type | Duration | Start | Finish | Predecessors | Complete | Remaining | Baseline start | Baseline finish | Baseline duration | Total slack | Constraint |
| --- | --- | --- | --- | --- | --- | --- | --- | --- | --- | --- | --- | --- | --- | --- |
| 1 | 1 | **PROVIAS_AUTOPISTA EL SOL_TRAMO TRUJILLO - CHICAMA (km 586+588 AL km 604+027)** |  | 214d | 2017-10-03 A | 2018-05-04 |  | 33% | 144.37d | 2017-10-03 | 2018-05-04 | 214d |  |  |
| 2 | 1.1 | **Hitos.** |  | 214d | 2017-10-03 | 2018-05-04 |  |  |  | 2017-10-03 | 2018-05-02 | 212d |  |  |
| 3 | 1.1.1 | Inicio del servicio | milestone | 0d | 2017-10-03 | 2017-10-03 |  |  |  | 2017-10-03 | 2017-10-03 | 0d | 214d | start no earlier than 2017-10-03 |
| 4 | 1.1.2 | Primer entregable | milestone | 0d | 2017-10-20 | 2017-10-20 |  |  |  | 2017-10-20 | 2017-10-20 | 0d | 197d | start no earlier than 2017-10-20 |
| 5 | 1.1.3 | Segundo entregable | milestone | 0d | 2017-12-01 | 2017-12-01 |  |  |  | 2017-12-01 | 2017-12-01 | 0d | 155d | start no earlier than 2017-12-01 |
| 6 | 1.1.4 | Tercer entregable | milestone | 0d | 2017-12-29 | 2017-12-29 |  |  |  | 2017-12-29 | 2017-12-29 | 0d | 127d | start no earlier than 2017-12-29 |
| 7 | 1.1.5 | Cuarto entregable | milestone | 0d | 2018-01-30 | 2018-01-30 |  |  |  | 2018-01-30 | 2018-01-30 | 0d | 95d | start no earlier than 2018-01-30 |
| 8 | 1.1.6 | Quinto entregable | milestone | 0d | 2018-03-01 | 2018-03-01 |  |  |  | 2018-03-01 | 2018-03-01 | 0d | 65d | start no earlier than 2018-03-01 |
| 9 | 1.1.7 | Sexto entregable | milestone | 0d | 2018-03-30 | 2018-03-30 |  |  |  | 2018-03-30 | 2018-03-30 | 0d | 36d | start no earlier than 2018-03-30 |
| 10 | 1.1.8 | Séptimo entregable | milestone | 0d | 2018-04-30 | 2018-04-30 |  |  |  | 2018-04-30 | 2018-04-30 | 0d | 5d | start no earlier than 2018-04-30 |
| 11 | 1.1.9 | Cierre del servicio | milestone | 0d | 2018-05-04 | 2018-05-04 |  |  |  | 2018-05-04 | 2018-05-04 | 0d | 1d | start no earlier than 2018-05-04 |
| 12 | 1.2 | **Inicio y Planificación** |  | 1d | 2017-10-03 A | 2017-10-03 A |  | 100% |  | 2017-10-03 | 2017-10-03 | 1d |  |  |
| 13 | 1.2.1 | Conformación de la brigada |  | 1d | 2017-10-03 A | 2017-10-03 A | 3 | 100% |  | 2017-10-03 | 2017-10-03 | 1d |  |  |
| 14 | 1.2.2 | Reunión de coordinación entre la brigada |  | 1d | 2017-10-03 A | 2017-10-03 A | 3 | 100% |  | 2017-10-03 | 2017-10-03 | 1d |  | start no earlier than 2017-09-19 |
| 15 | 1.2.3 | Plan de trabajo |  | 1d | 2017-10-03 A | 2017-10-03 A | 3 | 100% |  | 2017-10-03 | 2017-10-03 | 1d |  |  |
| 16 | 1.3 | **Ejecución** |  | 207d | 2017-10-04 A | 2018-04-28 |  | 33% | 139.69d | 2017-10-04 | 2018-04-28 | 207d | 6d |  |
| 17 | 1.3.1 | **Labores preliminares** |  | 1d | 2017-10-04 A | 2017-10-04 A |  | 100% |  | 2017-10-04 | 2017-10-04 | 1d |  |  |
| 18 | 1.3.1.1 | Revisión y análisis de información recibida |  | 1d | 2017-10-04 A | 2017-10-04 A | 15 | 100% |  | 2017-10-04 | 2017-10-04 | 1d |  |  |
| 19 | 1.3.1.2 | Coordinación especialista saneamiento de predios UGDV |  | 1d | 2017-10-04 A | 2017-10-04 A | 15 | 100% |  | 2017-10-04 | 2017-10-04 | 1d |  |  |
| 20 | 1.3.1.3 | Coordinación en IGN para certificación de puntos control |  | 1d | 2017-10-04 A | 2017-10-04 A | 15 | 100% |  | 2017-10-04 | 2017-10-04 | 1d |  |  |
| 21 | 1.3.1.4 | Almacenamiento de información en GPS |  | 1d | 2017-10-04 A | 2017-10-04 A | 15 | 100% |  | 2017-10-04 | 2017-10-04 | 1d |  |  |
| 22 | 1.3.2 | **Labores en campo** |  | 15d | 2017-10-05 A | 2017-10-19 A |  | 100% |  | 2017-10-05 | 2017-10-19 | 15d |  |  |
| 23 | 1.3.2.1 | Movilización a la zona de trabajo |  | 1d | 2017-10-05 A | 2017-10-05 A | 21 | 100% |  | 2017-10-05 | 2017-10-05 | 1d |  |  |
| 24 | 1.3.2.2 | Instalación de los puntos de control (7 puntos) |  | 2d | 2017-10-06 A | 2017-10-07 A | 23 | 100% |  | 2017-10-06 | 2017-10-07 | 2d |  |  |
| 25 | 1.3.2.3 | Recopilación de información predial en Trujillo |  | 2d | 2017-10-07 A | 2017-10-08 A | 24FS-1d | 100% |  | 2017-10-07 | 2017-10-08 | 2d |  |  |
| 26 | 1.3.2.4 | Plan de vuelo e instalación de puntos de control terrestre (Dianas) |  | 2d | 2017-10-07 A | 2017-10-08 A | 24FS-1d | 100% |  | 2017-10-07 | 2017-10-08 | 2d |  |  |
| 27 | 1.3.2.5 | Vuelo de Dron y Registro Aerofotográfico |  | 2d | 2017-10-08 A | 2017-10-09 A | 26FS-1d | 100% |  | 2017-10-08 | 2017-10-09 | 2d |  |  |
| 28 | 1.3.2.6 | Convocatoria a los titulares de los predios |  | 2d | 2017-10-07 A | 2017-10-08 A | 24FS-1d | 100% |  | 2017-10-07 | 2017-10-08 | 2d |  |  |
| 29 | 1.3.2.7 | Linderación de predios |  | 10d | 2017-10-09 A | 2017-10-18 A | 28 | 100% |  | 2017-10-09 | 2017-10-18 | 10d |  |  |
| 30 | 1.3.2.8 | Inventario de existencias |  | 10d | 2017-10-09 A | 2017-10-18 A | 28 | 100% |  | 2017-10-09 | 2017-10-18 | 10d |  |  |
| 31 | 1.3.2.9 | Desmovilización |  | 1d | 2017-10-19 A | 2017-10-19 A | 30 | 100% |  | 2017-10-19 | 2017-10-19 | 1d |  |  |

| ID | WBS | Task | Duration | Start | Finish | Predecessors | Complete | Remaining | Baseline start | Baseline finish | Baseline duration | Total slack | Free slack |
| --- | --- | --- | --- | --- | --- | --- | --- | --- | --- | --- | --- | --- | --- |
| 32 | 1.3.3 | **Labores en gabinete (segundo entregable)** | 50d | 2017-10-09 A | 2017-11-27 |  | 97% | 1.48d | 2017-10-09 | 2017-11-27 | 50d | 0d |  |
| 33 | 1.3.3.1 | Plano de ubicación de puntos Geodésicos | 2d | 2017-10-09 A | 2017-10-10 A | 28 | 100% |  | 2017-10-09 | 2017-10-10 | 2d |  |  |
| 34 | 1.3.3.2 | Elaboración de modelos; base CAD, formatos planos | 2d | 2017-10-09 A | 2017-10-10 A | 28 | 100% |  | 2017-10-09 | 2017-10-10 | 2d |  |  |
| 35 | 1.3.3.3 | Elaboración del ortomosaico y digitalización de predios | 8d | 2017-10-13 A | 2017-10-20 A | 29FS-6d | 100% |  | 2017-10-13 | 2017-10-20 | 8d |  |  |
| 36 | 1.3.3.4 | Elaboración de planos y MD para Búsqueda Catastral | 16d | 2017-10-16 A | 2017-10-31 A | 35FS-5d | 100% |  | 2017-10-16 | 2017-10-31 | 16d |  |  |
| 37 | 1.3.3.5 | Informe del levantamiento físico | 5d | 2017-11-01 A | 2017-11-05 A | 36 | 100% |  | 2017-11-01 | 2017-11-05 | 5d |  |  |
| 38 | 1.3.3.6 | Informe de recopilación y procesamiento datos de campo | 5d | 2017-11-01 A | 2017-11-05 A | 36 | 100% |  | 2017-11-01 | 2017-11-05 | 5d |  |  |
| 39 | 1.3.3.7 | Gestión para la obtención de Certificado de Búsqueda Catastral | 2d | 2017-11-19 A | 2017-11-20 | 36FS+18d | 20% | 1.6d | 2017-11-19 | 2017-11-20 | 2d | 0d |  |
| 40 | 1.3.3.8 | Elaboración de planos y MD para Anotaciones Preventivas | 7d | 2017-11-21 A | 2017-11-27 A | 39 | 100% |  | 2017-11-21 | 2017-11-27 | 7d |  |  |
| 41 | 1.3.3.9 | Conformación exp a SUNARP para obtener las Anotaciones Preventivas de Derecho de Vía | 7d | 2017-11-21 A | 2017-11-27 A | 39 | 100% |  | 2017-11-21 | 2017-11-27 | 7d |  |  |
| 42 | 1.3.4 | **Labores de seguimiento (tercer entregable)** | 47d | 2017-11-01 A | 2017-12-17 |  | 23% | 35.98d | 2017-11-01 | 2017-12-17 | 47d | 138d |  |
| 43 | 1.3.4.1 | Elaboración de plano clave | 3d | 2017-11-28 A | 2017-11-30 A | 40 | 100% |  | 2017-11-28 | 2017-11-30 | 3d |  |  |
| 44 | 1.3.4.2 | Elaboración de plano de planta de los puntos de control | 3d | 2017-11-28 A | 2017-11-30 A | 40 | 100% |  | 2017-11-28 | 2017-11-30 | 3d |  |  |
| 45 | 1.3.4.3 | Elaboración de planos y MD para expediente de tasación | 13d | 2017-11-01 A | 2017-11-13 | 36 | 50% | 6.5d | 2017-11-01 | 2017-11-13 | 13d | 2.5d | 0d |
| 46 | 1.3.4.4 | Elaboración de expedientes para tasación y remisión a Vivienda | 5d | 2017-11-14 A | 2017-11-18 | 45 | 50% | 2.5d | 2017-11-14 | 2017-11-18 | 5d | 167d |  |
| 47 | 1.3.4.5 | Informe del análisis técnico legal de la búsqueda catastral | 10d | 2017-11-28 | 2017-12-07 | 41 |  |  | 2017-11-28 | 2017-12-07 | 10d | 148d |  |
| 48 | 1.3.4.6 | Inscripción de las Anotaciones Preventiva_1 | 10d | 2017-12-08 | 2017-12-17 | 41FS+10d |  |  | 2017-12-08 | 2017-12-17 | 10d | 138d |  |
| 49 | 1.3.4.7 | Clasificación de certificados de búsqueda catastral | 10d | 2017-11-26 | 2017-12-05 | 39FS+5d |  |  | 2017-11-26 | 2017-12-05 | 10d | 0d |  |
| 50 | 1.3.4.8 | Informe general Análisis Técnico Legal de todos los predios | 10d | 2017-12-06 | 2017-12-15 | 49 |  |  | 2017-12-06 | 2017-12-15 | 10d | 0d |  |
| 51 | 1.3.5 | **Labores de seguimiento (cuarto entregable)** | 75d | 2017-12-16 | 2018-02-28 |  |  |  | 2017-12-16 | 2018-02-28 | 75d | 0d |  |
| 52 | 1.3.5.1 | Publicaciones para posesionarios | 30d | 2017-12-16 | 2018-01-14 | 50 |  |  | 2017-12-16 | 2018-01-14 | 30d | 110d |  |
| 53 | 1.3.5.2 | Publicaciones para Sujeto Pasivo | 30d | 2017-12-16 | 2018-01-14 | 50 |  |  | 2017-12-16 | 2018-01-14 | 30d | 0d |  |
| 54 | 1.3.5.3 | Expedientes a SBN para transferencia de bienes del Estado | 10d | 2018-01-15 | 2018-01-24 | 53 |  |  | 2018-01-15 | 2018-01-24 | 10d | 0d |  |
| 55 | 1.3.5.4 | Oficios y Notificaciones; Sujeto Pasivo, ocupantes y poseedor | 5d | 2018-01-25 | 2018-01-29 | 54 |  |  | 2018-01-25 | 2018-01-29 | 5d | 0d |  |
| 56 | 1.3.5.5 | Inscripción de las Anotaciones Preventiva_2 | 10d | 2018-01-30 | 2018-02-08 | 55 |  |  | 2018-01-30 | 2018-02-08 | 10d | 0d |  |
| 57 | 1.3.5.6 | Plan de saneamiento; transferencia Interestatal | 10d | 2018-02-09 | 2018-02-18 | 56 |  |  | 2018-02-09 | 2018-02-18 | 10d | 0d |  |
| 58 | 1.3.5.7 | Solicitud de devolución de exp de tasación y remisión PROVIAS | 10d | 2018-02-19 | 2018-02-28 | 57 |  |  | 2018-02-19 | 2018-02-28 | 10d | 0d |  |

| ID | WBS | Task | Duration | Start | Finish | Predecessors | Baseline start | Baseline finish | Baseline duration | Total slack |
| --- | --- | --- | --- | --- | --- | --- | --- | --- | --- | --- |
| 59 | 1.3.6 | **Labores de seguimiento (quinto, sexto y séptimo entregable)** | 59d | 2018-03-01 | 2018-04-28 |  | 2018-03-01 | 2018-04-28 | 59d | 0d |
| 60 | 1.3.6.1 | Informe del quinto entregable | 10d | 2018-03-01 | 2018-03-10 | 58 | 2018-03-01 | 2018-03-10 | 10d | 0d |
| 61 | 1.3.6.2 | Elaboración de expe de independización o inmatriculación | 10d | 2018-03-11 | 2018-03-20 | 60 | 2018-03-11 | 2018-03-20 | 10d | 0d |
| 62 | 1.3.6.3 | Informe de sexto entregable | 10d | 2018-03-21 | 2018-03-30 | 61 | 2018-03-21 | 2018-03-30 | 10d | 0d |
| 63 | 1.3.6.4 | Gestión de RM, RD, Formularios Registrales y contratos | 10d | 2018-03-31 | 2018-04-09 | 62 | 2018-03-31 | 2018-04-09 | 10d | 0d |
| 64 | 1.3.6.5 | Gestión de inscripción en SUNARP | 10d | 2018-04-10 | 2018-04-19 | 63 | 2018-04-10 | 2018-04-19 | 10d | 0d |
| 65 | 1.3.6.6 | Informe Final | 9d | 2018-04-20 | 2018-04-28 | 64 | 2018-04-20 | 2018-04-28 | 9d | 0d |
| 66 | 1.4 | **Cierre de Proyecto** | 6d | 2018-04-29 | 2018-05-04 |  | 2018-04-29 | 2018-05-04 | 6d | 0d |
| 67 | 1.4.1 | Control de calidad | 1d | 2018-04-29 | 2018-04-29 | 65 | 2018-04-29 | 2018-04-29 | 1d | 0d |
| 68 | 1.4.2 | Entrega al cliente | 1d | 2018-04-30 | 2018-04-30 | 67 | 2018-04-30 | 2018-04-30 | 1d | 4d |
| 69 | 1.4.3 | Cierre de Proyecto | 4d | 2018-05-01 | 2018-05-04 | 67FS+1d | 2018-05-01 | 2018-05-04 | 4d | 0d |
