# Gantt_Trujillo-Chicama TC01_V2

Schedule from MS Project, 2017-09-21 to 2018-04-20, A marks actual dates.

## Calendars

- Todos los días: Mon-Sun 09:00-13:00, 15:00-19:00.

## Schedule

| ID | WBS | Task | Type | Duration | Start | Finish | Predecessors | Complete | Remaining | Baseline start | Baseline finish | Baseline duration | Baseline 1 start | Baseline 1 finish | Total slack | Free slack | Constraint |
| --- | --- | --- | --- | --- | --- | --- | --- | --- | --- | --- | --- | --- | --- | --- | --- | --- | --- |
| 1 | 1 | **PROVIAS_AUTOPISTA EL SOL_TRAMO EVITAMIENTO TRUJILLO (Km 557+485 AL Km 562+30)** |  | 212d | 2017-09-21 A | 2018-04-20 |  | 7% | 196.67d | 2017-09-21 | 2018-04-20 | 212d | 2017-09-19 | 2018-04-20 | 0d |  |  |
| 2 | 1.1 | **Hitos.** |  | 212d | 2017-09-21 A | 2018-04-20 |  |  | 212d | 2017-09-21 | 2018-04-20 | 211d | 2017-10-05 | 2018-04-20 |  |  |  |
| 3 | 1.1.1 | Inicio del servicio | milestone | 0d | 2017-09-21 A | 2017-09-21 A |  | 100% |  | 2017-09-21 | 2017-09-21 | 0d |  |  |  |  | start no earlier than 2017-09-21 |
| 4 | 1.1.2 | Primer entregable | milestone | 0d | 2017-10-10 | 2017-10-10 |  |  |  | 2017-10-10 | 2017-10-10 | 0d | 2017-10-05 | 2017-10-05 | 193d |  | start no earlier than 2017-10-10 |
| 5 | 1.1.3 | Segundo entregable | milestone | 0d | 2017-11-20 | 2017-11-20 |  |  |  | 2017-11-20 | 2017-11-20 | 0d | 2017-11-15 | 2017-11-15 | 152d |  | start no earlier than 2017-11-20 |
| 6 | 1.1.4 | Tercer entregable | milestone | 0d | 2017-12-20 | 2017-12-20 |  |  |  | 2017-12-20 | 2017-12-20 | 0d | 2017-12-15 | 2017-12-15 | 122d |  | start no earlier than 2017-12-20 |
| 7 | 1.1.5 | Cuarto entregable | milestone | 0d | 2018-01-20 | 2018-01-20 |  |  |  | 2018-01-20 | 2018-01-20 | 0d | 2018-01-15 | 2018-01-15 | 91d |  | start no earlier than 2018-01-20 |
| 8 | 1.1.6 | Quinto entregable | milestone | 0d | 2018-02-20 | 2018-02-20 |  |  |  | 2018-02-20 | 2018-02-20 | 0d | 2018-02-15 | 2018-02-15 | 60d |  | start no earlier than 2018-02-20 |
| 9 | 1.1.7 | Sexto entregable | milestone | 0d | 2018-03-20 | 2018-03-20 |  |  |  | 2018-03-20 | 2018-03-20 | 0d | 2018-03-15 | 2018-03-15 | 32d |  | start no earlier than 2018-03-20 |
| 10 | 1.1.8 | Séptimo entregable | milestone | 0d | 2018-04-18 | 2018-04-18 |  |  |  | 2018-04-18 | 2018-04-18 | 0d | 2018-04-13 | 2018-04-13 | 3d |  | start no earlier than 2018-04-18 |
| 11 | 1.1.9 | Cierre del servicio | milestone | 0d | 2018-04-20 | 2018-04-20 |  |  |  | 2018-04-20 | 2018-04-20 | 0d | 2018-04-20 | 2018-04-20 | 1d |  | start no earlier than 2018-04-20 |
| 12 | 1.2 | **Inicio y Planificación** |  | 1d | 2017-09-21 A | 2017-09-21 A |  | 100% |  | 2017-09-21 | 2017-09-21 | 1d | 2017-09-19 | 2017-09-19 |  |  |  |
| 13 | 1.2.1 | Conformación de la brigada |  | 1d | 2017-09-21 A | 2017-09-21 A | 3 | 100% |  | 2017-09-21 | 2017-09-21 | 1d | 2017-09-19 | 2017-09-19 |  |  |  |
| 14 | 1.2.2 | Reunión de coordinación entre la brigada |  | 1d | 2017-09-21 A | 2017-09-21 A | 3 | 100% |  | 2017-09-21 | 2017-09-21 | 1d | 2017-09-19 | 2017-09-19 |  |  | start no earlier than 2017-09-19 |
| 15 | 1.2.3 | Plan de trabajo |  | 1d | 2017-09-21 A | 2017-09-21 A | 3 | 100% |  | 2017-09-21 | 2017-09-21 | 1d | 2017-09-19 | 2017-09-19 |  |  |  |
| 16 | 1.3 | **Ejecución** |  | 207d | 2017-09-22 A | 2018-04-16 |  | 6% | 193.66d | 2017-09-22 | 2018-04-16 | 207d | 2017-09-15 | 2018-04-18 | 4d |  |  |
| 17 | 1.3.1 | **Labores preliminares** |  | 1d | 2017-09-22 A | 2017-09-22 A |  | 100% |  | 2017-09-22 | 2017-09-22 | 1d | 2017-09-20 | 2017-09-20 |  |  |  |
| 18 | 1.3.1.1 | Revisión y análisis de información recibida |  | 1d | 2017-09-22 A | 2017-09-22 A | 15 | 100% |  | 2017-09-22 | 2017-09-22 | 1d | 2017-09-20 | 2017-09-20 |  |  |  |
| 19 | 1.3.1.2 | Coordinación especialista saneamiento de predios UGDV |  | 1d | 2017-09-22 A | 2017-09-22 A | 15 | 100% |  | 2017-09-22 | 2017-09-22 | 1d | 2017-09-20 | 2017-09-20 |  |  |  |
| 20 | 1.3.1.3 | Coordinación en IGN para certificación de puntos control |  | 1d | 2017-09-22 A | 2017-09-22 A | 15 | 100% |  | 2017-09-22 | 2017-09-22 | 1d | 2017-09-20 | 2017-09-20 |  |  |  |
| 21 | 1.3.1.4 | Almacenamiento de información en GPS |  | 1d | 2017-09-22 A | 2017-09-22 A | 15 | 100% |  | 2017-09-22 | 2017-09-22 | 1d | 2017-09-20 | 2017-09-20 |  |  |  |
| 22 | 1.3.2 | **Labores en campo** |  | 15d | 2017-09-23 A | 2017-10-07 |  | 45% | 8.2d | 2017-09-23 | 2017-10-07 | 15d | 2017-09-21 | 2017-10-09 | 195d |  |  |
| 23 | 1.3.2.1 | Movilización a la zona de trabajo |  | 1d | 2017-09-23 A | 2017-09-23 A | 21 | 100% |  | 2017-09-23 | 2017-09-23 | 1d | 2017-09-21 | 2017-09-21 |  |  |  |
| 24 | 1.3.2.2 | Instalación de los puntos de control (3 puntos) |  | 2d | 2017-09-24 A | 2017-09-25 | 23 | 50% | 1d | 2017-09-24 | 2017-09-25 | 2d | 2017-09-22 | 2017-09-23 | 1.5d | 0d |  |
| 25 | 1.3.2.3 | Recopilación de información predial en Trujillo |  | 2d | 2017-09-25 A | 2017-09-26 A | 24FS-1d | 100% |  | 2017-09-25 | 2017-09-26 | 2d | 2017-09-22 | 2017-09-23 |  |  |  |
| 26 | 1.3.2.4 | Plan de vuelo e instalación de puntos de control terrestre (Dianas) |  | 2d | 2017-09-25 A | 2017-09-26 A | 24FS-1d | 100% |  | 2017-09-25 | 2017-09-26 | 2d | 2017-09-24 | 2017-09-25 |  |  |  |
| 27 | 1.3.2.5 | Vuelo de Dron y Registro Aerofotográfico |  | 2d | 2017-09-26 A | 2017-09-27 A | 26FS-1d | 100% |  | 2017-09-26 | 2017-09-27 | 2d | 2017-09-26 | 2017-09-26 |  |  |  |
| 28 | 1.3.2.6 | Convocatoria a los titulares de los predios |  | 2d | 2017-09-25 A | 2017-09-26 | 24FS-1d | 75% | 0.5d | 2017-09-25 | 2017-09-26 | 2d | 2017-09-27 | 2017-09-30 | 2.5d | 0d |  |
| 29 | 1.3.2.7 | Linderación de predios |  | 10d | 2017-09-27 A | 2017-10-06 | 28 | 25% | 7.5d | 2017-09-27 | 2017-10-06 | 10d | 2017-10-01 | 2017-10-08 | 0d |  |  |
| 30 | 1.3.2.8 | Inventario de existencias |  | 10d | 2017-09-27 A | 2017-10-06 | 28 | 25% | 7.5d | 2017-09-27 | 2017-10-06 | 10d | 2017-10-01 | 2017-10-08 | 195d | 0d |  |
| 31 | 1.3.2.9 | Desmovilización |  | 1d | 2017-10-07 | 2017-10-07 | 30 |  |  | 2017-10-07 | 2017-10-07 | 1d | 2017-10-09 | 2017-10-09 | 195d |  |  |

| ID | WBS | Task | Duration | Start | Finish | Predecessors | Complete | Remaining | Baseline start | Baseline finish | Baseline duration | Baseline 1 start | Baseline 1 finish | Total slack | Free slack |
| --- | --- | --- | --- | --- | --- | --- | --- | --- | --- | --- | --- | --- | --- | --- | --- |
| 32 | 1.3.3 | **Labores en gabinete (segundo entregable)** | 50d | 2017-09-27 A | 2017-11-15 |  | 4% | 48.15d | 2017-09-27 | 2017-11-15 | 50d | 2017-09-15 | 2017-10-12 | 156d |  |
| 33 | 1.3.3.1 | Plano de ubicación de puntos Geodésicos | 2d | 2017-09-27 | 2017-09-28 | 28 |  |  | 2017-09-27 | 2017-09-28 | 2d | 2017-10-01 | 2017-10-02 | 204d |  |
| 34 | 1.3.3.2 | Elaboración de modelos; base CAD, formatos planos | 2d | 2017-09-27 A | 2017-09-28 A | 28 | 100% |  | 2017-09-27 | 2017-09-28 | 2d | 2017-10-01 | 2017-10-02 |  |  |
| 35 | 1.3.3.3 | Elaboración del ortomosaico y digitalización de predios | 8d | 2017-10-01 | 2017-10-08 | 29FS-6d |  |  | 2017-10-01 | 2017-10-08 | 8d |  |  | 0d |  |
| 36 | 1.3.3.4 | Elaboración de planos y MD para Búsqueda Catastral | 16d | 2017-10-04 | 2017-10-19 | 35FS-5d |  |  | 2017-10-04 | 2017-10-19 | 16d | 2017-10-06 | 2017-10-20 | 0d |  |
| 37 | 1.3.3.5 | Informe del levantamiento físico | 5d | 2017-10-20 | 2017-10-24 | 36 |  |  | 2017-10-20 | 2017-10-24 | 5d | 2017-10-21 | 2017-10-25 | 178d |  |
| 38 | 1.3.3.6 | Informe de recopilación y procesamiento datos de campo | 5d | 2017-10-20 | 2017-10-24 | 36 |  |  | 2017-10-20 | 2017-10-24 | 5d | 2017-10-21 | 2017-10-25 | 178d |  |
| 39 | 1.3.3.7 | Gestión para la obtención de Certificado de Búsqueda Catastral | 2d | 2017-11-07 | 2017-11-08 | 36FS+18d |  |  | 2017-11-07 | 2017-11-08 | 2d | 2017-11-08 | 2017-11-09 | 0d |  |
| 40 | 1.3.3.8 | Elaboración de planos y MD para Anotaciones Preventivas | 7d | 2017-11-09 | 2017-11-15 | 39 |  |  | 2017-11-09 | 2017-11-15 | 7d |  |  | 153d | 0d |
| 41 | 1.3.3.9 | Conformación exp a SUNARP para obtener las Anotaciones Preventivas de Derecho de Vía | 7d | 2017-11-09 | 2017-11-15 | 39 |  |  | 2017-11-09 | 2017-11-15 | 7d | 2017-11-10 | 2017-11-16 | 136d | 0d |
| 42 | 1.3.4 | **Labores de seguimiento (tercer entregable)** | 47d | 2017-10-20 | 2017-12-05 |  |  |  | 2017-10-20 | 2017-12-05 | 47d | 2017-10-21 | 2017-12-06 | 25d |  |
| 43 | 1.3.4.1 | Elaboración de plano clave | 3d | 2017-11-16 | 2017-11-18 | 40 |  |  | 2017-11-16 | 2017-11-18 | 3d | 2017-10-21 | 2017-10-23 | 153d |  |
| 44 | 1.3.4.2 | Elaboración de plano de planta de los puntos de control | 3d | 2017-11-16 | 2017-11-18 | 40 |  |  | 2017-11-16 | 2017-11-18 | 3d | 2017-10-21 | 2017-10-23 | 153d |  |
| 45 | 1.3.4.3 | Elaboración de planos y MD para expediente de tasación | 13d | 2017-10-20 | 2017-11-01 | 36 |  |  | 2017-10-20 | 2017-11-01 | 13d | 2017-10-21 | 2017-11-04 | 165d | 0d |
| 46 | 1.3.4.4 | Elaboración de expedientes para tasación y remisión a Vivienda | 5d | 2017-11-02 | 2017-11-06 | 45 |  |  | 2017-11-02 | 2017-11-06 | 5d | 2017-11-05 | 2017-11-09 | 165d |  |
| 47 | 1.3.4.5 | Informe del análisis técnico legal de la búsqueda catastral | 10d | 2017-11-16 | 2017-11-25 | 41 |  |  | 2017-11-16 | 2017-11-25 | 10d | 2017-11-17 | 2017-11-26 | 146d |  |
| 48 | 1.3.4.6 | Inscripción de las Anotaciones Preventiva_1 | 10d | 2017-11-26 | 2017-12-05 | 41FS+10d |  |  | 2017-11-26 | 2017-12-05 | 10d | 2017-11-27 | 2017-12-06 | 136d |  |
| 49 | 1.3.4.7 | Clasificación de certificados de búsqueda catastral | 10d | 2017-11-14 | 2017-11-23 | 39FS+5d |  |  | 2017-11-14 | 2017-11-23 | 10d | 2017-11-15 | 2017-11-24 | 0d |  |
| 50 | 1.3.4.8 | Informe general Análisis Técnico Legal de todos los predios | 10d | 2017-11-24 | 2017-12-03 | 49 |  |  | 2017-11-24 | 2017-12-03 | 10d | 2017-11-25 | 2017-12-04 | 0d |  |
| 51 | 1.3.5 | **Labores de seguimiento (cuarto entregable)** | 75d | 2017-12-04 | 2018-02-16 |  |  |  | 2017-12-04 | 2018-02-16 | 75d | 2017-12-05 | 2018-02-17 | 0d |  |
| 52 | 1.3.5.1 | Publicaciones para posesionarios | 30d | 2017-12-04 | 2018-01-02 | 50 |  |  | 2017-12-04 | 2018-01-02 | 30d | 2017-12-05 | 2018-01-03 | 108d |  |
| 53 | 1.3.5.2 | Publicaciones para Sujeto Pasivo | 30d | 2017-12-04 | 2018-01-02 | 50 |  |  | 2017-12-04 | 2018-01-02 | 30d | 2017-12-05 | 2018-01-03 | 0d |  |
| 54 | 1.3.5.3 | Expedientes a SBN para transferencia de bienes del Estado | 10d | 2018-01-03 | 2018-01-12 | 53 |  |  | 2018-01-03 | 2018-01-12 | 10d | 2018-01-04 | 2018-01-13 | 0d |  |
| 55 | 1.3.5.4 | Oficios y Notificaciones; Sujeto Pasivo, ocupantes y poseedor | 5d | 2018-01-13 | 2018-01-17 | 54 |  |  | 2018-01-13 | 2018-01-17 | 5d | 2018-01-14 | 2018-01-18 | 0d |  |
| 56 | 1.3.5.5 | Inscripción de las Anotaciones Preventiva_2 | 10d | 2018-01-18 | 2018-01-27 | 55 |  |  | 2018-01-18 | 2018-01-27 | 10d | 2018-01-19 | 2018-01-28 | 0d |  |
| 57 | 1.3.5.6 | Plan de saneamiento; transferencia Interestatal | 10d | 2018-01-28 | 2018-02-06 | 56 |  |  | 2018-01-28 | 2018-02-06 | 10d | 2018-01-29 | 2018-02-07 | 0d |  |
| 58 | 1.3.5.7 | Solicitud de devolución de exp de tasación y remisión PROVIAS | 10d | 2018-02-07 | 2018-02-16 | 57 |  |  | 2018-02-07 | 2018-02-16 | 10d | 2018-02-08 | 2018-02-17 | 0d |  |

| ID | WBS | Task | Duration | Start | Finish | Predecessors | Baseline start | Baseline finish | Baseline duration | Baseline 1 start | Baseline 1 finish | Total slack |
| --- | --- | --- | --- | --- | --- | --- | --- | --- | --- | --- | --- | --- |
| 59 | 1.3.6 | **Labores de seguimiento (quinto, sexto y séptimo entregable)** | 59d | 2018-02-17 | 2018-04-16 |  | 2018-02-17 | 2018-04-16 | 59d | 2018-02-18 | 2018-04-18 | 0d |
| 60 | 1.3.6.1 | Informe del quinto entregable | 10d | 2018-02-17 | 2018-02-26 | 58 | 2018-02-17 | 2018-02-26 | 10d | 2018-02-18 | 2018-02-27 | 0d |
| 61 | 1.3.6.2 | Elaboración de expe de independización o inmatriculación | 10d | 2018-02-27 | 2018-03-08 | 60 | 2018-02-27 | 2018-03-08 | 10d | 2018-02-28 | 2018-03-09 | 0d |
| 62 | 1.3.6.3 | Informe de sexto entregable | 10d | 2018-03-09 | 2018-03-18 | 61 | 2018-03-09 | 2018-03-18 | 10d | 2018-03-10 | 2018-03-19 | 0d |
| 63 | 1.3.6.4 | Gestión de RM, RD, Formularios Registrales y contratos | 10d | 2018-03-19 | 2018-03-28 | 62 | 2018-03-19 | 2018-03-28 | 10d | 2018-03-20 | 2018-03-29 | 0d |
| 64 | 1.3.6.5 | Gestión de inscripción en SUNARP | 10d | 2018-03-29 | 2018-04-07 | 63 | 2018-03-29 | 2018-04-07 | 10d | 2018-03-30 | 2018-04-08 | 0d |
| 65 | 1.3.6.6 | Informe Final | 9d | 2018-04-08 | 2018-04-16 | 64 | 2018-04-08 | 2018-04-16 | 9d | 2018-04-09 | 2018-04-18 | 0d |
| 66 | 1.4 | **Cierre de Proyecto** | 4d | 2018-04-17 | 2018-04-20 |  | 2018-04-17 | 2018-04-20 | 4d | 2018-04-10 | 2018-04-14 | 0d |
| 67 | 1.4.1 | Control de calidad | 1d | 2018-04-17 | 2018-04-17 | 65 | 2018-04-17 | 2018-04-17 | 1d | 2018-04-19 | 2018-04-24 | 0d |
| 68 | 1.4.2 | Entrega al cliente | 1d | 2018-04-18 | 2018-04-18 | 67 | 2018-04-18 | 2018-04-18 | 1d | 2018-04-25 | 2018-04-25 | 2d |
| 69 | 1.4.3 | Cierre de Proyecto | 2d | 2018-04-19 | 2018-04-20 | 67FS+1d | 2018-04-19 | 2018-04-20 | 2d | 2018-04-25 | 2018-04-25 | 0d |
