# FLOSOLUTION_Cronograma_CIVA_San Antonio

Schedule from MS Project, 2018-03-26 to 2019-06-04, A marks actual dates.

## Calendars

- JPP: Mon-Sun 09:00-13:00, 15:00-19:00. Exceptions (off unless hours are given): 2018-03-29 to 2018-04-01 (Semana santa).

## Schedule

| ID | WBS | Task | Type | Duration | Start | Finish | Predecessors | Complete | Remaining | Total slack | Free slack | Constraint |
| --- | --- | --- | --- | --- | --- | --- | --- | --- | --- | --- | --- | --- |
| 1 | 1 | **Proyecto de Agua Mineral** |  | 432d | 2018-03-26 A | 2019-06-04 |  | 1% | 429.62d | 0d |  |  |
| 2 | 1.1 | **Hitos** |  | 399d | 2018-03-26 A | 2019-05-02 |  |  | 399d | 33d |  |  |
| 3 | 1.1.1 | Inicio del proyecto | milestone | 0d | 2018-03-26 A | 2018-03-26 A |  | 100% |  |  |  | start no earlier than 2018-03-26 |
| 4 | 1.1.2 | Autorización para estudios | milestone | 0d | 2018-05-10 | 2018-05-10 | 17 |  |  | 258d |  |  |
| 5 | 1.1.3 | Contrato de opción | milestone | 0d | 2019-01-23 | 2019-01-23 | 33 |  |  | 99d |  |  |
| 6 | 1.1.4 | Contrato de participación | milestone | 0d | 2019-05-02 | 2019-05-02 | 38 |  |  | 33d |  |  |
| 7 | 1.2 | **Inicio y Planificación** |  | 2d | 2018-03-26 A | 2018-03-27 A |  | 100% |  |  |  |  |
| 8 | 1.2.1 | Conformación y alineamiento de equipo |  | 1d | 2018-03-26 A | 2018-03-26 A | 3 | 100% |  |  |  |  |
| 9 | 1.2.2 | Elaboración del plan de ejecución |  | 1d | 2018-03-27 A | 2018-03-27 A | 8 | 100% |  |  |  |  |
| 10 | 1.2.3 | Aprobación del Plan de Ejecución | milestone | 0d | 2018-03-27 A | 2018-03-27 A | 9 | 100% |  |  |  |  |
| 11 | 1.3 | **Ejecución y Monitoreo** |  | 397d | 2018-03-28 | 2019-05-02 | 7 |  |  | 33d |  |  |
| 12 | 1.3.1 | **Etapa 1 Autorización de Estudios** |  | 198d | 2018-03-28 | 2018-10-15 |  |  |  | 200d |  |  |
| 13 | 1.3.1.1 | Reconocimiento y obtención de información CC San Antonio |  | 10d | 2018-03-28 | 2018-04-10 |  |  |  | 243d | 0d |  |
| 14 | 1.3.1.2 | Presentación del Proyecto |  | 10d | 2018-03-28 | 2018-04-10 | 13SS |  |  | 243d | 0d |  |
| 15 | 1.3.1.3 | Búsquedas catastral de Huella del proyecto |  | 30d | 2018-03-28 | 2018-04-30 | 14SS |  |  | 243d | 0d |  |
| 16 | 1.3.1.4 | Diagnóstico de derechos |  | 10d | 2018-05-01 | 2018-05-10 | 15 |  |  | 243d | 0d | start no earlier than 2018-04-12 |
| 17 | 1.3.1.5 | Gestión de autorización para estudios |  | 30d | 2018-04-11 | 2018-05-10 | 13 |  |  | 258d | 0d |  |
| 18 | 1.3.1.6 | Catastro, inventario y tasación |  | 15d | 2018-05-11 | 2018-05-25 | 16 |  |  | 243d |  |  |
| 19 | 1.3.1.7 | **Acompañamieto de toma de muestras** |  | 184d | 2018-04-15 | 2018-10-15 |  |  |  | 3d | 0d |  |
| 20 | 1.3.1.7.1 | 1 Muestreo |  | 1d | 2018-04-15 | 2018-04-15 |  |  |  | 183d |  | start no earlier than 2018-04-15 |
| 21 | 1.3.1.7.2 | 2 Muestreo |  | 1d | 2018-05-15 | 2018-05-15 |  |  |  | 153d |  | start no earlier than 2018-05-15 |
| 22 | 1.3.1.7.3 | 3 Muestreo |  | 1d | 2018-06-15 | 2018-06-15 |  |  |  | 122d |  | start no earlier than 2018-06-15 |
| 23 | 1.3.1.7.4 | 4 Muestreo |  | 1d | 2018-07-15 | 2018-07-15 |  |  |  | 92d |  | start no earlier than 2018-07-15 |
| 24 | 1.3.1.7.5 | 5 Muestreo |  | 1d | 2018-08-15 | 2018-08-15 |  |  |  | 61d |  | start no earlier than 2018-08-15 |
| 25 | 1.3.1.7.6 | 6 Muestreo |  | 1d | 2018-09-15 | 2018-09-15 |  |  |  | 30d |  | start no earlier than 2018-09-15 |
| 26 | 1.3.1.7.7 | 7 Muestreo |  | 1d | 2018-10-15 | 2018-10-15 |  |  |  | 3d |  | start no earlier than 2018-10-15 |
| 27 | 1.3.1.8 | Viabilidad de Proyecto | milestone | 0d | 2018-10-15 | 2018-10-15 | 19 |  |  | 3d | 0d |  |

| ID | WBS | Task | Duration | Start | Finish | Predecessors | Total slack | Free slack |
| --- | --- | --- | --- | --- | --- | --- | --- | --- |
| 28 | 1.3.2 | **Etapa 2 Negociación de contrato de opción** | 100d | 2018-10-16 | 2019-01-23 | 27 | 3d | 0d |
| 29 | 1.3.2.1 | Sensibilización de propietarios y/o posesionarios | 20d | 2018-10-16 | 2018-11-04 |  | 3d | 0d |
| 30 | 1.3.2.2 | Contrato de opción y revisión de actas | 20d | 2018-10-16 | 2018-11-04 | 29SS | 3d | 0d |
| 31 | 1.3.2.3 | Organización de asamblea | 45d | 2018-11-05 | 2018-12-19 | 30 | 3d | 0d |
| 32 | 1.3.2.4 | Negociación de contrato de opción | 15d | 2018-12-20 | 2019-01-03 | 31 | 3d | 0d |
| 33 | 1.3.2.5 | Firma de contrato | 20d | 2019-01-04 | 2019-01-23 | 32 | 3d | 0d |
| 34 | 1.3.3 | **Etapa 3 Negociación de contrato de participación** | 99d | 2019-01-24 | 2019-05-02 | 28 | 3d |  |
| 35 | 1.3.3.1 | Sensibilización a propietarios y/o posesionarios | 30d | 2019-01-24 | 2019-02-22 |  | 3d | 0d |
| 36 | 1.3.3.2 | Negociación de contrato de participación | 45d | 2019-02-23 | 2019-04-08 | 35 | 3d | 0d |
| 37 | 1.3.3.3 | Firma de contrato | 20d | 2019-04-09 | 2019-04-28 | 36 | 3d | 0d |
| 38 | 1.3.3.4 | Formalización de contrato | 4d | 2019-04-29 | 2019-05-02 | 37 | 3d | 0d |
| 39 | 1.4 | **Cierre de Proyecto** | 30d | 2019-05-06 | 2019-06-04 | 38 |  |  |
| 40 | 1.4.1 | Elaboración de informe final del servicio | 15d | 2019-05-06 | 2019-05-20 | 38 | 0d |  |
| 41 | 1.4.2 | Informe de gestión proyecto | 10d | 2019-05-21 | 2019-05-30 | 40 | 0d |  |
| 42 | 1.4.3 | Entrega Informe Final | 5d | 2019-05-31 | 2019-06-04 | 41 | 0d |  |
