# M&A_Diag_Cronograma_v1

Schedule from MS Project, 2018-05-09 to 2018-06-11.
Microsoft

## Calendars

- JPP-MYA: Mon-Fri 09:00-13:00, 14:00-18:00; Sat-Sun off.

## Schedule

| ID | WBS | Task | Type | Duration | Start | Finish | Predecessors | Total slack | Free slack |
| --- | --- | --- | --- | --- | --- | --- | --- | --- | --- |
| 1 | 1 | **Proyecto: Diagnóstico Urbano Pucusana** |  | 24d | 2018-05-09 | 2018-06-11 |  | 0d |  |
| 2 | 1.1 | **Hitos** |  | 23d | 2018-05-09 | 2018-06-11 |  | 0d |  |
| 3 | 1.1.1 | Firma de contrato | milestone | 0d | 2018-05-09 | 2018-05-09 | 11 | 23d |  |
| 4 | 1.1.2 | E1: Recopilación de información | milestone | 0d | 2018-05-18 | 2018-05-18 | 16 | 16d |  |
| 5 | 1.1.3 | E2: Certificado de zonificación | milestone | 0d | 2018-06-08 | 2018-06-08 | 17 | 1d |  |
| 6 | 1.1.4 | E3: Elaboración de planos temáticos | milestone | 0d | 2018-06-01 | 2018-06-01 | 18 | 6d |  |
| 7 | 1.1.5 | E4: Certificado de búsqueda catastral | milestone | 0d | 2018-06-08 | 2018-06-08 | 19 | 1d |  |
| 8 | 1.1.6 | E5: Informe | milestone | 0d | 2018-06-11 | 2018-06-11 | 20 | 0d |  |
| 9 | 1.1.7 | E6: Informe final | milestone | 0d | 2018-06-11 | 2018-06-11 | 23 | 0d |  |
| 10 | 1.2 | **Inicio y Planificación** |  | 2d | 2018-05-09 | 2018-05-10 |  | 0d |  |
| 11 | 1.2.1 | Firma de contrato |  | 1d | 2018-05-09 | 2018-05-09 |  | 0d |  |
| 12 | 1.2.2 | Conformación del equipo de trabajo |  | 1d | 2018-05-09 | 2018-05-09 | 11SS | 0d |  |
| 13 | 1.2.3 | Inducción al personal de trabajo |  | 1d | 2018-05-10 | 2018-05-10 | 12 | 0d |  |
| 14 | 1.3 | **Ejecución - Seguimiento y Control** |  | 23d | 2018-05-10 | 2018-06-11 |  | 0d |  |
| 15 | 1.3.1 | **Diagnóstico Urbano Pucusana** |  | 23d | 2018-05-10 | 2018-06-11 |  | 0d |  |
| 16 | 1.3.1.1 | Recopilación de información |  | 7d | 2018-05-10 | 2018-05-18 | 13SS | 0d |  |
| 17 | 1.3.1.2 | Trámite para el certificado de zonificación |  | 15d | 2018-05-21 | 2018-06-08 | 16 | 1d | 0d |
| 18 | 1.3.1.3 | Elaboración de planos temáticos |  | 17d | 2018-05-10 | 2018-06-01 | 16SS | 1d | 0d |
| 19 | 1.3.1.4 | Trámite para el certificado de búsqueda catastral |  | 17d | 2018-05-17 | 2018-06-08 | 18SS+5d | 1d | 0d |
| 20 | 1.3.1.5 | Elaboración del informe |  | 18d | 2018-05-17 | 2018-06-11 | 16SS+5d | 0d |  |
| 21 | 1.3.2 | **Cierre del Proyecto** |  | 3d | 2018-06-07 | 2018-06-11 |  | 0d |  |
| 22 | 1.3.2.1 | Elaboración del informe final |  | 3d | 2018-06-07 | 2018-06-11 | 20FS-3d | 0d |  |
| 23 | 1.3.2.2 | Entrega de documentación generada del proyecto |  | 1d | 2018-06-11 | 2018-06-11 | 22FF | 0d |  |
