# Proyecto1- Independizacion

Schedule from MS Project, 2018-04-11 to 2018-09-25, A marks actual dates.

## Calendars

- Estándar: Mon-Fri 09:00-13:00, 15:00-19:00; Sat-Sun off.

## Schedule

| ID | WBS | Task | Duration | Start | Finish | Predecessors | Complete | Remaining | Total slack |
| --- | --- | --- | --- | --- | --- | --- | --- | --- | --- |
| 2 | 1 | **Independización y Acumulación - Pachacamac** | 120d | 2018-04-11 A | 2018-09-25 |  | 7% | 112d | 0d |
| 3 | 1.1 | **Independización** | 87d | 2018-04-11 A | 2018-08-09 |  | 9% | 79d | 0d |
| 4 | 1.1.1 | Recopilación de información | 8d | 2018-04-11 A | 2018-04-20 A |  | 100% |  |  |
| 5 | 1.1.2 | Elaboración de Exp. Técnico | 3d | 2018-04-23 | 2018-04-25 | 4 |  |  | 0d |
| 6 | 1.1.3 | Certificado de Zonificación y Vias | 7d | 2018-04-26 | 2018-05-04 | 5 |  |  | 0d |
| 7 | 1.1.4 | Ingreso de exp Municipalidad | 1d | 2018-05-07 | 2018-05-07 | 6 |  |  | 0d |
| 8 | 1.1.5 | Resolución de Independización | 22d | 2018-05-08 | 2018-06-06 | 7 |  |  | 0d |
| 9 | 1.1.6 | Ingreso de Exp en SUNARP | 1d | 2018-06-07 | 2018-06-07 | 8 |  |  | 0d |
| 10 | 1.1.7 | Inscripción de SUNARP | 45d | 2018-06-08 | 2018-08-09 | 9 |  |  | 0d |
| 11 | 1.2 | **Acumulación** | 31d | 2018-08-10 | 2018-09-21 |  |  |  | 0d |
| 12 | 1.2.1 | Ingreso de Exp en SUNARP | 1d | 2018-08-10 | 2018-08-10 | 10 |  |  | 0d |
| 13 | 1.2.2 | Inscripción en SUNARP | 30d | 2018-08-13 | 2018-09-21 | 12 |  |  | 0d |
| 14 | 1.3 | Cierre del proyecto | 2d | 2018-09-24 | 2018-09-25 | 13 |  |  | 0d |
