# Cronograma_CdA_Tasación zona embalse y predio Pacopata_v0

Schedule from MS Project, 2017-11-27 to 2017-11-30, status date 2017-03-16, A marks actual dates.
Microsoft

## Calendars

- dias calendario: Mon-Fri 09:00-13:00, 15:00-19:00; Sat-Sun 08:00-17:00.

## Schedule

| ID | WBS | Task | Type | Duration | Start | Finish | Predecessors | Complete | Baseline start | Baseline finish | Baseline duration |
| --- | --- | --- | --- | --- | --- | --- | --- | --- | --- | --- | --- |
| 1 | 1 | **Tasación Comercial C.C. Cachuy** |  | 4d | 2017-11-27 A | 2017-11-30 A |  | 100% | 2017-11-27 | 2017-11-30 | 4d |
| 2 | 1.1 | **Inicio** |  | 0d | 2017-11-27 A | 2017-11-27 A |  | 100% | 2017-11-27 | 2017-11-27 | 0d |
| 3 | 1.1.1 | Revisión de antecedentes e información recibida | milestone | 0d | 2017-11-27 A | 2017-11-27 A |  | 100% | 2017-11-27 | 2017-11-27 | 0d |
| 4 | 1.2 | **Ejecución** |  | 4d | 2017-11-27 A | 2017-11-30 A |  | 100% | 2017-11-27 | 2017-11-30 | 4d |
| 5 | 1.2.1 | **Trabajo de Campo** |  | 1d | 2017-11-27 A | 2017-11-27 A |  | 100% | 2017-11-27 | 2017-11-27 | 1d |
| 6 | 1.2.1.1 | Movilización a la zona de trabajo | milestone | 0d | 2017-11-27 A | 2017-11-27 A | 3 | 100% | 2017-11-27 | 2017-11-27 | 0d |
| 7 | 1.2.1.2 | Inspección del área requerida |  | 1d | 2017-11-27 A | 2017-11-27 A | 6 | 100% | 2017-11-27 | 2017-11-27 | 1d |
| 8 | 1.2.1.3 | Estudio de mercado local |  | 1d | 2017-11-27 A | 2017-11-27 A | 6 | 100% | 2017-11-27 | 2017-11-27 | 1d |
| 9 | 1.2.1.4 | Desmovilización de la zona de trabajo | milestone | 0d | 2017-11-27 A | 2017-11-27 A |  | 100% | 2017-11-27 | 2017-11-27 | 0d |
| 10 | 1.2.2 | **Trabajo de gabinete** |  | 3d | 2017-11-28 A | 2017-11-30 A |  | 100% | 2017-11-28 | 2017-11-30 | 3d |
| 11 | 1.2.2.1 | Elaboración de Tasación Comercial |  | 2d | 2017-11-28 A | 2017-11-29 A | 9, 8 | 100% | 2017-11-28 | 2017-11-29 | 2d |
| 12 | 1.2.2.2 | Control de calidad |  | 1d | 2017-11-30 A | 2017-11-30 A | 11 | 100% | 2017-11-30 | 2017-11-30 | 1d |
| 13 | 1.3 | **Cierre** |  | 0d | 2017-11-30 A | 2017-11-30 A |  | 100% | 2017-11-30 | 2017-11-30 | 0d |
| 14 | 1.3.1 | Entrega de Tasación Comercial | milestone | 0d | 2017-11-30 A | 2017-11-30 A | 12 | 100% | 2017-11-30 | 2017-11-30 | 0d |
| 15 | 1.3.2 | Cierre de proyecto | milestone | 0d | 2017-11-30 A | 2017-11-30 A | 12 | 100% | 2017-11-30 | 2017-11-30 | 0d |
