# Proyecto Alicia

Schedule from MS Project, 2017-04-27 to 2017-06-30.
Microsoft

## Calendars

- Calendario JPP1: Mon-Sat 09:00-13:00, 15:00-19:00; Sun off. Exceptions (off unless hours are given): 2017-05-01 (DIA DEL TRABAJO).

## Schedule

| ID | WBS | Task | Type | Duration | Start | Finish | Predecessors | Total slack | Free slack |
| --- | --- | --- | --- | --- | --- | --- | --- | --- | --- |
| 1 | 1 | **Proyecto: IBEREOLICA - Diagnóstico de Derechos CARAVELI** |  | 55d | 2017-04-27 | 2017-06-30 |  | 0d |  |
| 2 | 1.1 | **Hitos** |  | 52d | 2017-04-27 | 2017-06-27 |  | 3d |  |
| 3 | 1.1.1 | Aceptación de la propuesta | milestone | 0d | 2017-04-27 | 2017-04-27 | 8SS | 55d |  |
| 4 | 1.1.2 | Informe de proceso de adquisición | milestone | 0d | 2017-06-05 | 2017-06-05 | 16 | 22d |  |
| 5 | 1.1.3 | Entrega de informe de diagnóstico de derechos | milestone | 0d | 2017-06-27 | 2017-06-27 | 23 | 3d |  |
| 6 | 1.2 | **Inicio y Planificación** |  | 4d | 2017-04-27 | 2017-05-02 |  | 0d |  |
| 7 | 1.2.1 | Conformación y alineamiento del equipo de trabajo |  | 1d | 2017-04-27 | 2017-04-27 |  | 0d |  |
| 8 | 1.2.2 | Revisión de información antecedente |  | 4d | 2017-04-27 | 2017-05-02 | 7SS | 0d |  |
| 9 | 1.2.3 | Reunión de inicio |  | 1d | 2017-05-02 | 2017-05-02 | 8FS-1d | 0d |  |
| 10 | 1.3 | **Ejecución y Monitoreo** |  | 43d | 2017-05-02 | 2017-06-20 |  | 0d |  |
| 11 | 1.3.1 | **Diagnóstico de Derechos** |  | 17d | 2017-05-08 | 2017-05-26 |  | 30d |  |
| 12 | 1.3.1.1 | Movilización a las zonas registrales 1 |  | 5d | 2017-05-08 | 2017-05-12 | 9FS+4d | 30d | 0d |
| 13 | 1.3.1.2 | Movilización a las zonas registrales 2 |  | 5d | 2017-05-22 | 2017-05-26 | 12FS+7d | 30d |  |
| 14 | 1.3.2 | **Desarrollo del Diagnóstico** |  | 43d | 2017-05-02 | 2017-06-20 |  | 0d |  |
| 15 | 1.3.2.1 | Recopilación de información (RRPP/Otras instituciones) |  | 25d | 2017-05-02 | 2017-05-30 | 9SS | 0d |  |
| 16 | 1.3.2.2 | Elaboración del informe del proceso de adquisición |  | 5d | 2017-05-31 | 2017-06-05 | 15 | 22d | 0d |
| 17 | 1.3.2.3 | Evaluación y análisis de información obtenida |  | 27d | 2017-05-16 | 2017-06-15 | 15SS+12d | 0d |  |
| 18 | 1.3.2.4 | Elaboración del informe de diagnóstico |  | 5d | 2017-06-15 | 2017-06-20 | 17FS-1d | 0d |  |
| 19 | 1.3.2.5 | Composición del mosaico cartográfico |  | 43d | 2017-05-02 | 2017-06-20 | 15SS | 9d |  |
| 20 | 1.3.2.6 | Verificación en campo |  | 2d | 2017-05-10 | 2017-05-11 | 9FS+6d | 43d |  |
| 21 | 1.4 | **Cierre del Proyecto** |  | 9d | 2017-06-21 | 2017-06-30 |  | 0d |  |
| 22 | 1.4.1 | Control de calidad |  | 5d | 2017-06-21 | 2017-06-26 | 18 | 0d |  |
| 23 | 1.4.2 | Entrega del informe de diagnóstico de derechos |  | 1d | 2017-06-27 | 2017-06-27 | 22 | 0d |  |
| 24 | 1.4.3 | Acta de cierre |  | 3d | 2017-06-28 | 2017-06-30 | 23 | 0d |  |
