# Adquisicion de Sitios

Schedule from MS Project, 2017-01-19 to 2017-04-20, status date 2017-01-06, A marks actual dates.
Microsoft

## Calendars

- Calendario JP: Mon-Sun 09:00-13:00, 15:00-19:00. Exceptions (off unless hours are given): 2017-04-13 (Jueves Santo), 2017-04-14 (Viernes Santo).

## Schedule

| ID | WBS | Task | Type | Duration | Start | Finish | Predecessors | Complete | Remaining | Total slack | Free slack |
| --- | --- | --- | --- | --- | --- | --- | --- | --- | --- | --- | --- |
| 1 | 1 | **Proyecto: Adquisición de 82 Sitios** |  | 90d | 2017-01-19 A | 2017-04-20 |  | 4% | 86.51d | 0d |  |
| 2 | 1.1 | **Hitos** |  | 90d | 2017-01-19 A | 2017-04-20 |  |  | 90d | 0d |  |
| 3 | 1.1.1 | Ubicación de Clusters | milestone | 0d | 2017-01-19 A | 2017-01-19 A | 17SS | 100% |  |  |  |
| 4 | 1.1.2 | Aceptación de la Propuesta | milestone | 0d | 2017-01-19 A | 2017-01-19 A | 13SS | 100% |  |  |  |
| 5 | 1.1.3 | Inicia Busqueda de Sitios | milestone | 0d | 2017-01-25 | 2017-01-25 | 20SS |  |  | 84d |  |
| 6 | 1.1.4 | Inicia Entrega de Cluster | milestone | 0d | 2017-02-09 | 2017-02-09 | 31SS |  |  | 69d |  |
| 7 | 1.1.5 | Inicia Aprobación de Cluster | milestone | 0d | 2017-02-24 | 2017-02-24 | 34SS |  |  | 54d |  |
| 8 | 1.1.6 | Inicia Compra de Sitios | milestone | 0d | 2017-02-24 | 2017-02-24 | 46SS |  |  | 54d |  |
| 9 | 1.1.7 | Fin de Busqueda de Sitios | milestone | 0d | 2017-03-25 | 2017-03-25 | 30 |  |  | 24d |  |
| 10 | 1.1.8 | Fin de Compra de Sitios | milestone | 0d | 2017-04-16 | 2017-04-16 | 56 |  |  | 4d |  |
| 11 | 1.1.9 | Fin del Proyecto | milestone | 0d | 2017-04-20 | 2017-04-20 | 62 |  |  | 0d |  |
| 12 | 1.2 | **Inicio y Planificación** |  | 4d | 2017-01-19 A | 2017-01-22 |  | 98% | 0.07d | 86d |  |
| 13 | 1.2.1 | Conformación y alineamiento de equipos |  | 4d | 2017-01-19 A | 2017-01-22 A |  | 100% |  |  |  |
| 14 | 1.2.2 | Plan de Trabajo |  | 4d | 2017-01-19 A | 2017-01-22 A | 13SS | 100% |  |  |  |
| 15 | 1.2.3 | Gestión de logística |  | 4d | 2017-01-19 A | 2017-01-22 | 13SS | 95% | 0.2d | 86d |  |
| 16 | 1.3 | **Ejecución y Monitoreo** |  | 6d | 2017-01-19 A | 2017-01-24 |  | 67% | 2d | 0d |  |
| 17 | 1.3.1 | Recepción y análisis de sitios |  | 4d | 2017-01-19 A | 2017-01-22 A | 13SS | 100% |  |  |  |
| 18 | 1.3.2 | Movilización del equipo e instalación de bases |  | 2d | 2017-01-23 | 2017-01-24 | 17 |  |  | 0d |  |
| 19 | 1.4 | **Busqueda de Sitios** |  | 65d | 2017-01-25 | 2017-03-30 |  |  |  | 0d |  |
| 20 | 1.4.1 | Cluster Cachachi y Paccha |  | 5d | 2017-01-25 | 2017-01-29 | 18 |  |  | 0d |  |
| 21 | 1.4.2 | Cluster Paucamarca y Andabamba |  | 5d | 2017-01-30 | 2017-02-03 | 20 |  |  | 24d | 0d |
| 22 | 1.4.3 | Cluster San Juan y Catache |  | 5d | 2017-02-04 | 2017-02-08 | 21 |  |  | 24d | 0d |
| 23 | 1.4.4 | Cluster Chetilla y Chancaybaños |  | 5d | 2017-02-09 | 2017-02-13 | 22 |  |  | 24d | 0d |
| 24 | 1.4.5 | Cluster San Bernardino y Huambos |  | 7d | 2017-02-14 | 2017-02-20 | 23 |  |  | 24d | 0d |
| 25 | 1.4.6 | Cluster Catan y Santo Domingo de La Capilla |  | 5d | 2017-02-21 | 2017-02-25 | 24 |  |  | 24d | 0d |
| 26 | 1.4.7 | Cluster Tumbaden y Cujillo |  | 5d | 2017-02-26 | 2017-03-02 | 25 |  |  | 24d | 0d |
| 27 | 1.4.8 | Cluster San Pablo y La Sacilia |  | 5d | 2017-03-03 | 2017-03-07 | 26 |  |  | 24d | 0d |
| 28 | 1.4.9 | Cluster Agua Blanca y Jaen |  | 8d | 2017-03-08 | 2017-03-15 | 27 |  |  | 24d | 0d |
| 29 | 1.4.10 | Cluster San Gregorio y Huabal |  | 5d | 2017-03-16 | 2017-03-20 | 28 |  |  | 24d | 0d |
| 30 | 1.4.11 | Cluster Bolivar y Las Pirias |  | 5d | 2017-03-21 | 2017-03-25 | 29 |  |  | 24d | 0d |
| 31 | 1.4.12 | Entrega de candidatos por clusters |  | 50d | 2017-02-09 | 2017-03-30 | 20SS+15d |  |  | 0d |  |

| ID | WBS | Task | Duration | Start | Finish | Predecessors | Total slack |
| --- | --- | --- | --- | --- | --- | --- | --- |
| 32 | 1.5 | **Compra de Sitios** | 50d | 2017-02-24 | 2017-04-16 |  | 0d |
| 33 | 1.5.1 | **Aprobación de candidatos** | 45d | 2017-02-24 | 2017-04-09 |  | 0d |
| 34 | 1.5.1.1 | Cluster Cachachi y Paccha | 4d | 2017-02-24 | 2017-02-27 | 31SS+15d | 0d |
| 35 | 1.5.1.2 | Cluster Paucamarca y Andabamba | 4d | 2017-02-28 | 2017-03-03 | 34 | 0d |
| 36 | 1.5.1.3 | Cluster San Juan y Catache | 4d | 2017-03-04 | 2017-03-07 | 35 | 0d |
| 37 | 1.5.1.4 | Cluster Chetilla y Chancaybaños | 4d | 2017-03-08 | 2017-03-11 | 36 | 0d |
| 38 | 1.5.1.5 | Cluster San Bernardino y Huambos | 4d | 2017-03-12 | 2017-03-15 | 37 | 0d |
| 39 | 1.5.1.6 | Cluster Catan y Santo Domingo de La Capilla | 4d | 2017-03-16 | 2017-03-19 | 38 | 0d |
| 40 | 1.5.1.7 | Cluster Tumbaden y Cujillo | 4d | 2017-03-20 | 2017-03-23 | 39 | 0d |
| 41 | 1.5.1.8 | Cluster San Pablo y La Sacilia | 4d | 2017-03-24 | 2017-03-27 | 40 | 0d |
| 42 | 1.5.1.9 | Cluster Agua Blanca y Jaen | 5d | 2017-03-28 | 2017-04-01 | 41 | 0d |
| 43 | 1.5.1.10 | Cluster San Gregorio y Huabal | 4d | 2017-04-02 | 2017-04-05 | 42 | 0d |
| 44 | 1.5.1.11 | Cluster Bolivar y Las Pirias | 4d | 2017-04-06 | 2017-04-09 | 43 | 0d |
| 45 | 1.5.2 | **Gestión de compra de sitios** | 50d | 2017-02-24 | 2017-04-16 |  | 0d |
| 46 | 1.5.2.1 | Cluster Cachachi y Paccha | 10d | 2017-02-24 | 2017-03-05 | 34SS | 40d |
| 47 | 1.5.2.2 | Cluster Paucamarca y Andabamba | 10d | 2017-02-28 | 2017-03-09 | 35SS | 36d |
| 48 | 1.5.2.3 | Cluster San Juan y Catache | 10d | 2017-03-04 | 2017-03-13 | 36SS | 32d |
| 49 | 1.5.2.4 | Cluster Chetilla y Chancaybaños | 10d | 2017-03-08 | 2017-03-17 | 37SS | 28d |
| 50 | 1.5.2.5 | Cluster San Bernardino y Huambos | 11d | 2017-03-12 | 2017-03-22 | 38SS | 23d |
| 51 | 1.5.2.6 | Cluster Catan y Santo Domingo de La Capilla | 10d | 2017-03-16 | 2017-03-25 | 39SS | 20d |
| 52 | 1.5.2.7 | Cluster Tumbaden y Cujillo | 10d | 2017-03-20 | 2017-03-29 | 40SS | 16d |
| 53 | 1.5.2.8 | Cluster San Pablo y La Sacilia | 10d | 2017-03-24 | 2017-04-02 | 41SS | 12d |
| 54 | 1.5.2.9 | Cluster Agua Blanca y Jaen | 11d | 2017-03-28 | 2017-04-07 | 42SS | 7d |
| 55 | 1.5.2.10 | Cluster San Gregorio y Huabal | 10d | 2017-04-02 | 2017-04-11 | 43SS | 3d |
| 56 | 1.5.2.11 | Cluster Bolivar y Las Pirias | 9d | 2017-04-06 | 2017-04-16 | 44SS | 0d |
| 57 | 1.5.3 | Gestión de licencia municipal | 40d | 2017-03-06 | 2017-04-16 | 33SS+10d | 4d |
| 58 | 1.5.4 | Gestión de CIRA | 40d | 2017-03-06 | 2017-04-16 | 33SS+10d | 4d |
| 59 | 1.5.5 | Gestión de PMA | 40d | 2017-03-06 | 2017-04-16 | 33SS+10d | 4d |

| ID | WBS | Task | Duration | Start | Finish | Predecessors | Total slack |
| --- | --- | --- | --- | --- | --- | --- | --- |
| 60 | 1.6 | **Cierre del Proyecto** | 4d | 2017-04-17 | 2017-04-20 |  | 0d |
| 61 | 1.6.1 | Elaboración del informe final | 3d | 2017-04-17 | 2017-04-19 | 45 | 0d |
| 62 | 1.6.2 | Entrega del informe final y documentación generada | 1d | 2017-04-20 | 2017-04-20 | 61 | 0d |
